# 414_003_T02_PP_priloha_A_v1

How a schedule from MS Project changed from version to version. A marks actual dates.

## Version 1 (saved 2020-10-24, file 414_003_T02_PP_priloha_A_v1.mpp)

Note of the change: Přidání úkolů v rámci první etapy projektu

| ID | WBS | Task | Duration | Start | Finish | Total float |
| --- | --- | --- | --- | --- | --- | --- |
| 1 | 1 | **Návrh a testování webové aplikace** | 1d? | 2021-03-01 | 2021-03-01 | 0d |
| 2 |  | Příprava konceptuální úrovně modelu | 1d? | 2021-03-01 | 2021-03-01 | 0d |
| 3 |  | Příprava technologické úrovně modelu | 1d? | 2021-03-01 | 2021-03-01 | 0d |
| 4 |  | Příprava implementační úrovně modelu | 1d? | 2021-03-01 | 2021-03-01 | 0d |
| 5 |  | Vytvoření návrhů jednotného vizuálního stylu aplikace | 1d? | 2021-03-01 | 2021-03-01 | 0d |
| 6 |  | Výběr stylu a návrh vizualizace všech stránek aplikace | 1d? | 2021-03-01 | 2021-03-01 | 0d |
| 7 |  | Vytvoření logiky celé aplikace | 1d? | 2021-03-01 | 2021-03-01 | 0d |
| 8 |  | Vytvoření databáze na základě datového modelu | 1d? | 2021-03-01 | 2021-03-01 | 0d |
| 9 |  | Napojení databáze na backend aplikace | 1d? | 2021-03-01 | 2021-03-01 | 0d |
| 10 |  | Vytvoření administrátorské sekce aplikace | 1d? | 2021-03-01 | 2021-03-01 | 0d |
| 11 |  | Otestování programových kódů pomocí jednotkových testů | 1d? | 2021-03-01 | 2021-03-01 | 0d |
| 12 |  | Vytvoření HTML + CSS základu aplikace | 1d? | 2021-03-01 | 2021-03-01 | 0d |
| 13 |  | Zavedení požadovaných uživatelských funkcionalit | 1d? | 2021-03-01 | 2021-03-01 | 0d |
| 14 |  | Otestování a schválení grafického rozhraní aplikace | 1d? | 2021-03-01 | 2021-03-01 | 0d |
| 15 |  | Otestování a schválení zakomponovaných uživatelských funkcionalit | 1d? | 2021-03-01 | 2021-03-01 | 0d |
| 16 |  | Programové propojení frontendu a backendu | 1d? | 2021-03-01 | 2021-03-01 | 0d |
| 17 |  | Vytvoření testovacího prostředí | 1d? | 2021-03-01 | 2021-03-01 | 0d |
| 18 |  | Otestování aplikace v roli běžného uživatele | 1d? | 2021-03-01 | 2021-03-01 | 0d |
| 19 |  | Otestování administrátorské sekce v roli správce | 1d? | 2021-03-01 | 2021-03-01 | 0d |

## Version 2 (saved 2020-10-25, file 414_003_T02_PP_priloha_A_v1.mpp)

Note of the change: Přidání dnů a alokace zdrojů

Last finish 2021-03-01 → 2021-03-23 (+22d).

Added:

| ID | Task | Duration | Start | Finish |
| --- | --- | --- | --- | --- |
| 20 | **Zprostředkování přístupů do portálů eIdentita a Datové schránky** | 1d? | 2021-03-01 | 2021-03-01 |
| 21 | Zjištění podmínek pro získání přístupů do portálu eIdentita | 1d? | 2021-03-01 | 2021-03-01 |
| 22 | Vypracování a zaslání žádosti Ministerstvu vnitra | 1d? | 2021-03-01 | 2021-03-01 |
| 23 | Nastavení komunikace mezi aplikací a portálem eIdentita | 1d? | 2021-03-01 | 2021-03-01 |
| 24 | Nasazení skriptů pro autentizaci do backendu aplikace | 1d? | 2021-03-01 | 2021-03-01 |
| 25 | Otestování přihlášení | 1d? | 2021-03-01 | 2021-03-01 |
| 26 | Zjištění podmínek pro získání přístupů do portálu Datové schránky | 1d? | 2021-03-01 | 2021-03-01 |
| 27 | Vypracování a zaslání žádosti Ministerstvu vnitra | 1d? | 2021-03-01 | 2021-03-01 |
| 28 | Nastavení komunikace mezi aplikací a portálem eIdentita | 1d? | 2021-03-01 | 2021-03-01 |
| 29 | Nastavení identifikace Datové schránky na základě autentizovaného uživatele | 1d? | 2021-03-01 | 2021-03-01 |
| 30 | Nasazení skriptů pro odeslání notifikací do backendu aplikace | 1d? | 2021-03-01 | 2021-03-01 |
| 31 | Otestování notifikačního odesílání | 1d? | 2021-03-01 | 2021-03-01 |
| 32 | **Získání informací o povinnostech občanů vůči finančnímu úřadu** | 1d? | 2021-03-01 | 2021-03-01 |
| 33 | Analýza interních systémů finanční správy pro automatizovaný sběr informací | 1d? | 2021-03-01 | 2021-03-01 |
| 34 | Vypracování reportu informací, které lze získávat automatizovaně | 1d? | 2021-03-01 | 2021-03-01 |
| 35 | Vypracování a zaslání žádosti Ministerstvu financí o komunikační přístup do interních systémů finanční správy | 1d? | 2021-03-01 | 2021-03-01 |
| 36 | Propojení s interním systémem finanční správy | 1d? | 2021-03-01 | 2021-03-01 |
| 37 | Vytvoření skriptů pro získání informací | 1d? | 2021-03-01 | 2021-03-01 |
| 38 | Otestování automatického sběru informací | 1d? | 2021-03-01 | 2021-03-01 |
| 39 | Vložení skriptů do backendu aplikace | 1d? | 2021-03-01 | 2021-03-01 |
| 40 | Vytvoření skriptu pro pravidelné spouštění automatizovaného sběru informací | 1d? | 2021-03-01 | 2021-03-01 |
| 41 | Analýza interních systémů finanční správy pro manuální sběr informací | 1d? | 2021-03-01 | 2021-03-01 |
| 42 | Vypracování reportu informací, které lze získat manuálně | 1d? | 2021-03-01 | 2021-03-01 |
| 43 | Kontaktování finanční správy ohledně výběru pracovníků | 1d? | 2021-03-01 | 2021-03-01 |
| 44 | Vypracování seznamu pracovníků pro zadávání informací do systému | 1d? | 2021-03-01 | 2021-03-01 |
| 45 | Vytvoření administrátorských účtů | 1d? | 2021-03-01 | 2021-03-01 |
| 46 | Přidělení práv administrativních pracovníků | 1d? | 2021-03-01 | 2021-03-01 |
| 47 | Zjištění kroků pro manuální zaznamenávání informací o povinnostech | 1d? | 2021-03-01 | 2021-03-01 |
| 48 | Sepsání návodu k zadávání informací pro administrativní pracovníky | 1d? | 2021-03-01 | 2021-03-01 |
| 49 | **Nasazení aplikace do produkčního prostředí** | 1d? | 2021-03-01 | 2021-03-01 |
| 50 | Výběr domény | 1d? | 2021-03-01 | 2021-03-01 |
| 51 | Registrace a zakoupení domény | 1d? | 2021-03-01 | 2021-03-01 |
| 52 | Výběr typu hostingu aplikace | 1d? | 2021-03-01 | 2021-03-01 |
| 53 | Příprava prostředí pro všechny potřebné komponenty aplikace | 1d? | 2021-03-01 | 2021-03-01 |
| 54 | Přesunutí aplikace z testovacího na produkční prostředí | 1d? | 2021-03-01 | 2021-03-01 |
| 55 | Otestování aplikace v produkčním prostředí čili kontrola, zda migrace proběhla v pořádku | 1d? | 2021-03-01 | 2021-03-01 |

Changed:

| ID | Task | Start | Finish | Duration | Total float | Predecessors | Other |
| --- | --- | --- | --- | --- | --- | --- | --- |
| 1 | **Návrh a testování webové aplikace** |  | 2021-03-01 → 2021-03-23 (+22d) | 1d? → 17d? |  |  | resources none → vedoucí projektu |
| 2 | Příprava konceptuální úrovně modelu |  | 2021-03-01 → 2021-03-04 (+3d) | 1d? → 4d |  |  | resources none → databázový specialista |
| 3 | Příprava technologické úrovně modelu | 2021-03-01 → 2021-03-05 (+4d) | 2021-03-01 → 2021-03-10 (+9d) | 1d? → 4d | 0d → 5d | none → 2 | resources none → databázový specialista |
| 4 | Příprava implementační úrovně modelu | 2021-03-01 → 2021-03-11 (+10d) | 2021-03-01 → 2021-03-16 (+15d) | 1d? → 4d | 0d → 5d | none → 3 | resources none → databázový specialista |
| 5 | Vytvoření návrhů jednotného vizuálního stylu aplikace |  | 2021-03-01 → 2021-03-12 (+11d) | 1d? → 10d |  | none → 2SS |  |
| 6 | Výběr stylu a návrh vizualizace všech stránek aplikace | 2021-03-01 → 2021-03-15 (+14d) | 2021-03-01 → 2021-03-23 (+22d) | 1d? → 7d |  | none → 5 |  |
| 8 | Vytvoření databáze na základě datového modelu |  | 2021-03-01 → 2021-03-05 (+4d) | 1d? → 5d | 0d → 12d |  | resources none → databázový specialista |
| 9 | Napojení databáze na backend aplikace |  | 2021-03-01 → 2021-03-02 (+1d) | 1d? → 2d | 0d → 15d |  | resources none → databázový specialista; programátor |
| 14 | Otestování a schválení grafického rozhraní aplikace |  | 2021-03-01 → 2021-03-12 (+11d) | 1d? → 10d | 0d → 7d |  | resources none → hlavní tester [50%]; tester |
| 15 | Otestování a schválení zakomponovaných uživatelských funkcionalit |  | 2021-03-01 → 2021-03-04 (+3d) | 1d? → 4d | 0d → 13d |  | resources none → hlavní tester [50%]; tester |
| 17 | Vytvoření testovacího prostředí |  | 2021-03-01 → 2021-03-18 (+17d) | 1d? → 14d | 0d → 3d |  | resources none → hlavní tester [50%]; tester |
| 18 | Otestování aplikace v roli běžného uživatele |  | 2021-03-01 → 2021-03-04 (+3d) | 1d? → 4d | 0d → 13d |  | resources none → hlavní tester [50%]; tester |
| 19 | Otestování administrátorské sekce v roli správce |  | 2021-03-01 → 2021-03-04 (+3d) | 1d? → 4d | 0d → 13d |  | resources none → hlavní tester [50%]; tester |

## Version 3 (saved 2020-10-26, file 414_003_T02_PP_priloha_A_v1.mpp)

Note of the change: Rozvržení MD celého plánu projektu

Last finish 2021-03-23 → 2021-12-29 (+281d).

Changed:

| ID | Task | Start | Finish | Duration | Total float | Predecessors | Other |
| --- | --- | --- | --- | --- | --- | --- | --- |
| 1 | **Návrh a testování webové aplikace** |  | 2021-03-23 → 2021-06-04 (+73d) | 17d? → 70d |  |  |  |
| 7 | Vytvoření logiky celé aplikace | 2021-03-01 → 2021-03-17 (+16d) | 2021-03-01 → 2021-03-30 (+29d) | 1d? → 10d | 16d → 182d | none → 4 | resources none → hlavní programátor [50%]; programátor |
| 8 | Vytvoření databáze na základě datového modelu | 2021-03-01 → 2021-03-31 (+30d) | 2021-03-05 → 2021-04-06 (+32d) |  | 12d → 182d | none → 7 |  |
| 9 | Napojení databáze na backend aplikace | 2021-03-01 → 2021-04-07 (+37d) | 2021-03-02 → 2021-04-08 (+37d) |  | 15d → 182d | none → 8 |  |
| 10 | Vytvoření administrátorské sekce aplikace | 2021-03-01 → 2021-04-09 (+39d) | 2021-03-01 → 2021-04-14 (+44d) | 1d? → 4d | 16d → 182d | none → 9 | resources none → hlavní programátor [50%]; programátor |
| 11 | Otestování programových kódů pomocí jednotkových testů | 2021-03-01 → 2021-04-15 (+45d) | 2021-03-01 → 2021-04-19 (+49d) | 1d? → 3d | 16d → 182d | none → 10, 12FF | resources none → hlavní programátor [50%]; programátor |
| 12 | Vytvoření HTML + CSS základu aplikace | 2021-03-01 → 2021-03-24 (+23d) | 2021-03-01 → 2021-04-06 (+36d) | 1d? → 10d | 16d → 0d | none → 6 | resources none → hlavní programátor [50%]; programátor |
| 13 | Zavedení požadovaných uživatelských funkcionalit | 2021-03-01 → 2021-04-07 (+37d) | 2021-03-01 → 2021-04-15 (+45d) | 1d? → 7d | 16d → 0d | none → 12 | resources none → hlavní programátor [50%]; programátor |
| 14 | Otestování a schválení grafického rozhraní aplikace | 2021-03-01 → 2021-04-16 (+46d) | 2021-03-12 → 2021-04-29 (+48d) |  | 7d → 0d | none → 13 |  |
| 15 | Otestování a schválení zakomponovaných uživatelských funkcionalit | 2021-03-01 → 2021-04-30 (+60d) | 2021-03-04 → 2021-05-05 (+62d) |  | 13d → 0d | none → 14 |  |
| 16 | Programové propojení frontendu a backendu | 2021-03-01 → 2021-05-06 (+66d) | 2021-03-01 → 2021-05-17 (+77d) | 1d? → 8d | 16d → 0d | none → 15 | resources none → hlavní programátor [50%]; programátor |
| 17 | Vytvoření testovacího prostředí | 2021-03-01 → 2021-05-18 (+78d) | 2021-03-18 → 2021-05-31 (+74d) | 14d → 10d | 3d → 0d | none → 16 |  |
| 18 | Otestování aplikace v roli běžného uživatele | 2021-03-01 → 2021-06-01 (+92d) | 2021-03-04 → 2021-06-04 (+92d) |  | 13d → 2d | none → 17 |  |
| 19 | Otestování administrátorské sekce v roli správce | 2021-03-01 → 2021-06-01 (+92d) | 2021-03-04 → 2021-06-04 (+92d) |  | 13d → 0d | none → 17 |  |
| 20 | **Zprostředkování přístupů do portálů eIdentita a Datové schránky** | 2021-03-01 → 2021-06-07 (+98d) | 2021-03-01 → 2021-06-23 (+114d) | 1d? → 13d | 16d → 0d |  |  |
| 21 | Zjištění podmínek pro získání přístupů do portálu eIdentita | 2021-03-01 → 2021-06-07 (+98d) | 2021-03-01 → 2021-06-10 (+101d) | 1d? → 4d | 16d → 2d | none → 19, 18 | resources none → IT technik |
| 22 | Vypracování a zaslání žádosti Ministerstvu vnitra | 2021-03-01 → 2021-06-11 (+102d) | 2021-03-01 → 2021-06-14 (+105d) | 1d? → 2d | 16d → 2d | none → 21 | resources none → IT technik |
| 23 | Nastavení komunikace mezi aplikací a portálem eIdentita | 2021-03-01 → 2021-06-15 (+106d) | 2021-03-01 → 2021-06-16 (+107d) | 1d? → 2d | 16d → 2d | none → 22 | resources none → programátor |
| 24 | Nasazení skriptů pro autentizaci do backendu aplikace | 2021-03-01 → 2021-06-17 (+108d) | 2021-03-01 → 2021-06-18 (+109d) | 1d? → 2d | 16d → 2d | none → 23 | resources none → programátor |
| 25 | Otestování přihlášení | 2021-03-01 → 2021-06-21 (+112d) | 2021-03-01 → 2021-06-21 (+112d) | 1d? → 1d | 16d → 2d | none → 24 | resources none → programátor |
| 26 | Zjištění podmínek pro získání přístupů do portálu Datové schránky | 2021-03-01 → 2021-06-07 (+98d) | 2021-03-01 → 2021-06-10 (+101d) | 1d? → 4d | 16d → 0d | none → 19 | resources none → IT technik |
| 27 | Vypracování a zaslání žádosti Ministerstvu vnitra | 2021-03-01 → 2021-06-11 (+102d) | 2021-03-01 → 2021-06-14 (+105d) | 1d? → 2d | 16d → 0d | none → 26 | resources none → IT technik |
| 28 | Nastavení komunikace mezi aplikací a portálem eIdentita | 2021-03-01 → 2021-06-15 (+106d) | 2021-03-01 → 2021-06-16 (+107d) | 1d? → 2d | 16d → 0d | none → 27 | resources none → programátor |
| 29 | Nastavení identifikace Datové schránky na základě autentizovaného uživatele | 2021-03-01 → 2021-06-17 (+108d) | 2021-03-01 → 2021-06-18 (+109d) | 1d? → 2d | 16d → 0d | none → 28 | resources none → programátor |
| 30 | Nasazení skriptů pro odeslání notifikací do backendu aplikace | 2021-03-01 → 2021-06-21 (+112d) | 2021-03-01 → 2021-06-22 (+113d) | 1d? → 2d | 16d → 0d | none → 29 | resources none → programátor |
| 31 | Otestování notifikačního odesílání | 2021-03-01 → 2021-06-23 (+114d) | 2021-03-01 → 2021-06-23 (+114d) | 1d? → 1d | 16d → 0d | none → 30 | resources none → programátor |
| 32 | **Získání informací o povinnostech občanů vůči finančnímu úřadu** | 2021-03-01 → 2021-06-24 (+115d) | 2021-03-01 → 2021-10-29 (+242d) | 1d? → 92d | 16d → 0d |  |  |
| 33 | Analýza interních systémů finanční správy pro automatizovaný sběr informací | 2021-03-01 → 2021-06-24 (+115d) | 2021-03-01 → 2021-08-11 (+163d) | 1d? → 35d | 16d → 0d | none → 25, 31 | resources none → systémový analytik |
| 34 | Vypracování reportu informací, které lze získávat automatizovaně | 2021-03-01 → 2021-08-12 (+164d) | 2021-03-01 → 2021-09-01 (+184d) | 1d? → 15d | 16d → 0d | none → 33 | resources none → procesní analytik |
| 35 | Vypracování a zaslání žádosti Ministerstvu financí o komunikační přístup do interních systémů finanční správy | 2021-03-01 → 2021-09-02 (+185d) | 2021-03-01 → 2021-09-15 (+198d) | 1d? → 10d | 16d → 0d | none → 34 | resources none → IT technik |
| 36 | Propojení s interním systémem finanční správy | 2021-03-01 → 2021-09-16 (+199d) | 2021-03-01 → 2021-09-23 (+206d) | 1d? → 6d | 16d → 0d | none → 35 | resources none → hlavní programátor [50%]; programátor |
| 37 | Vytvoření skriptů pro získání informací | 2021-03-01 → 2021-09-24 (+207d) | 2021-03-01 → 2021-10-07 (+220d) | 1d? → 10d | 16d → 0d | none → 36 | resources none → hlavní programátor [50%]; programátor |
| 38 | Otestování automatického sběru informací | 2021-03-01 → 2021-10-08 (+221d) | 2021-03-01 → 2021-10-14 (+227d) | 1d? → 5d | 16d → 0d | none → 37 | resources none → hlavní programátor [50%]; programátor |
| 39 | Vložení skriptů do backendu aplikace | 2021-03-01 → 2021-10-15 (+228d) | 2021-03-01 → 2021-10-21 (+234d) | 1d? → 5d | 16d → 0d | none → 38 | resources none → hlavní programátor [50%]; programátor |
| 40 | Vytvoření skriptu pro pravidelné spouštění automatizovaného sběru informací | 2021-03-01 → 2021-10-22 (+235d) | 2021-03-01 → 2021-10-29 (+242d) | 1d? → 6d | 16d → 0d | none → 39 | resources none → hlavní programátor [50%]; programátor |
| 41 | Analýza interních systémů finanční správy pro manuální sběr informací | 2021-03-01 → 2021-06-24 (+115d) | 2021-03-01 → 2021-07-21 (+142d) | 1d? → 20d | 16d → 5d | none → 25, 31 | resources none → systémový analytik |
| 42 | Vypracování reportu informací, které lze získat manuálně | 2021-03-01 → 2021-07-22 (+143d) | 2021-03-01 → 2021-08-04 (+156d) | 1d? → 10d | 16d → 5d | none → 41 | resources none → procesní analytik |
| 43 | Kontaktování finanční správy ohledně výběru pracovníků | 2021-03-01 → 2021-08-05 (+157d) | 2021-03-01 → 2021-09-01 (+184d) | 1d? → 20d | 16d → 5d | none → 42 | resources none → bysnys analytik |
| 44 | Vypracování seznamu pracovníků pro zadávání informací do systému | 2021-03-01 → 2021-09-02 (+185d) | 2021-03-01 → 2021-09-21 (+204d) | 1d? → 14d | 16d → 5d | none → 43 | resources none → bysnys analytik |
| 45 | Vytvoření administrátorských účtů | 2021-03-01 → 2021-09-22 (+205d) | 2021-03-01 → 2021-09-23 (+206d) | 1d? → 2d | 16d → 5d | none → 44 | resources none → hlavní programátor [50%]; programátor |
| 46 | Přidělení práv administrativních pracovníků | 2021-03-01 → 2021-09-24 (+207d) | 2021-03-01 → 2021-09-24 (+207d) | 1d? → 1d | 16d → 5d | none → 45 | resources none → hlavní programátor [50%]; programátor |
| 47 | Zjištění kroků pro manuální zaznamenávání informací o povinnostech | 2021-03-01 → 2021-09-27 (+210d) | 2021-03-01 → 2021-10-08 (+221d) | 1d? → 10d | 16d → 5d | none → 46 | resources none → procesní analytik |
| 48 | Sepsání návodu k zadávání informací pro administrativní pracovníky | 2021-03-01 → 2021-10-11 (+224d) | 2021-03-01 → 2021-10-22 (+235d) | 1d? → 10d | 16d → 5d | none → 47 | resources none → procesní analytik |
| 49 | **Nasazení aplikace do produkčního prostředí** | 2021-03-01 → 2021-11-01 (+245d) | 2021-03-01 → 2021-12-29 (+303d) | 1d? → 43d | 16d → 0d |  |  |
| 50 | Výběr domény | 2021-03-01 → 2021-11-01 (+245d) | 2021-03-01 → 2021-11-05 (+249d) | 1d? → 5d | 16d → 0d | none → 40, 48 | resources none → IT technik |
| 51 | Registrace a zakoupení domény | 2021-03-01 → 2021-11-08 (+252d) | 2021-03-01 → 2021-11-10 (+254d) | 1d? → 3d | 16d → 0d | none → 50 | resources none → IT technik |
| 52 | Výběr typu hostingu aplikace | 2021-03-01 → 2021-11-11 (+255d) | 2021-03-01 → 2021-11-17 (+261d) | 1d? → 5d | 16d → 0d | none → 51 | resources none → IT technik |
| 53 | Příprava prostředí pro všechny potřebné komponenty aplikace | 2021-03-01 → 2021-11-18 (+262d) | 2021-03-01 → 2021-12-01 (+275d) | 1d? → 10d | 16d → 0d | none → 52 | resources none → IT technik |
| 54 | Přesunutí aplikace z testovacího na produkční prostředí | 2021-03-01 → 2021-12-02 (+276d) | 2021-03-01 → 2021-12-22 (+296d) | 1d? → 15d | 16d → 0d | none → 53 | resources none → IT technik |
| 55 | Otestování aplikace v produkčním prostředí čili kontrola, zda migrace proběhla v pořádku | 2021-03-01 → 2021-12-23 (+297d) | 2021-03-01 → 2021-12-29 (+303d) | 1d? → 5d | 16d → 0d | none → 54 | resources none → IT technik |

## Version 4 (saved 2020-10-28, file 414_003_T02_PP_priloha_A_v1.mpp)

Note of the change: Merge pull request #4 from Hasatori/Marek

Last finish 2021-12-29 → 2021-12-23 (-6d).

Added:

| ID | Task | Duration | Start | Finish | Predecessors |
| --- | --- | --- | --- | --- | --- |
| 56 | Projektový nárazník | 23.46d | 2021-11-22 | 2021-12-23 | 55 |

Changed:

| ID | Task | Start | Finish | Duration | Total float | Predecessors | Other |
| --- | --- | --- | --- | --- | --- | --- | --- |
| 1 | **Návrh a testování webové aplikace** |  | 2021-06-04 → 2021-05-21 (-14d) | 70d → 59.51d |  |  | resources vedoucí projektu → vedoucí projektu [50%]; baseline start none → 2021-03-01; baseline finish none → 2021-05-19 |
| 2 | Příprava konceptuální úrovně modelu |  | 2021-03-04 → 2021-03-03 (-1d) | 4d → 3d |  |  | baseline start none → 2021-03-01; baseline finish none → 2021-03-03 |
| 3 | Příprava technologické úrovně modelu | 2021-03-05 → 2021-03-04 (-1d) | 2021-03-10 → 2021-03-08 (-2d) | 4d → 3d | 182d → 3.51d |  | baseline start none → 2021-03-04; baseline finish none → 2021-03-08 |
| 4 | Příprava implementační úrovně modelu | 2021-03-11 → 2021-03-09 (-2d) | 2021-03-16 → 2021-03-12 (-4d) |  | 182d → 3.51d |  | resources databázový specialista → hlavní programátor [50%]; baseline start none → 2021-03-09; baseline finish none → 2021-03-12 |
| 5 | Vytvoření návrhů jednotného vizuálního stylu aplikace |  | 2021-03-12 → 2021-03-08 (-4d) | 10d → 5.17d |  |  | resources none → grafik; baseline start none → 2021-03-01; baseline finish none → 2021-03-05 |
| 6 | Výběr stylu a návrh vizualizace všech stránek aplikace | 2021-03-15 → 2021-03-08 (-7d) | 2021-03-23 → 2021-03-11 (-12d) | 7d → 3d |  |  | resources none → grafik; baseline start none → 2021-03-08; baseline finish none → 2021-03-10 |
| 7 | Vytvoření logiky celé aplikace | 2021-03-17 → 2021-03-15 (-2d) | 2021-03-30 → 2021-03-26 (-4d) |  | 182d → 3.51d |  | baseline start none → 2021-03-15; baseline finish none → 2021-03-26 |
| 8 | Vytvoření databáze na základě datového modelu | 2021-03-31 → 2021-03-29 (-2d) | 2021-04-06 → 2021-04-02 (-4d) | 5d → 4.83d | 182d → 3.51d |  | baseline start none → 2021-03-29; baseline finish none → 2021-04-02 |
| 9 | Napojení databáze na backend aplikace | 2021-04-07 → 2021-04-02 (-5d) | 2021-04-08 → 2021-04-06 (-2d) |  | 182d → 3.51d |  | baseline start none → 2021-04-05; baseline finish none → 2021-04-06 |
| 10 | Vytvoření administrátorské sekce aplikace | 2021-04-09 → 2021-04-06 (-3d) | 2021-04-14 → 2021-04-12 (-2d) |  | 182d → 3.51d |  | baseline start none → 2021-04-07; baseline finish none → 2021-04-12 |
| 11 | Otestování programových kódů pomocí jednotkových testů | 2021-04-15 → 2021-04-12 (-3d) | 2021-04-19 → 2021-04-15 (-4d) |  | 182d → 3.51d | 10, 12FF → 10 | baseline start none → 2021-04-13; baseline finish none → 2021-04-15 |
| 12 | Vytvoření HTML + CSS základu aplikace | 2021-03-24 → 2021-03-11 (-13d) | 2021-04-06 → 2021-03-23 (-14d) | 10d → 8.17d |  |  | resources hlavní programátor [50%]; programátor → grafik; baseline start none → 2021-03-11; baseline finish none → 2021-03-22 |
| 13 | Zavedení požadovaných uživatelských funkcionalit | 2021-04-07 → 2021-03-23 (-15d) | 2021-04-15 → 2021-04-01 (-14d) |  |  |  | resources hlavní programátor [50%]; programátor → programátor; baseline start none → 2021-03-23; baseline finish none → 2021-03-31 |
| 14 | Otestování a schválení grafického rozhraní aplikace | 2021-04-16 → 2021-04-01 (-15d) | 2021-04-29 → 2021-04-15 (-14d) |  |  |  | baseline start none → 2021-04-01; baseline finish none → 2021-04-14 |
| 15 | Otestování a schválení zakomponovaných uživatelských funkcionalit | 2021-04-30 → 2021-04-15 (-15d) | 2021-05-05 → 2021-04-21 (-14d) |  |  |  | baseline start none → 2021-04-15; baseline finish none → 2021-04-20 |
| 16 | Programové propojení frontendu a backendu | 2021-05-06 → 2021-04-21 (-15d) | 2021-05-17 → 2021-05-03 (-14d) | 8d → 8.17d |  | 15 → 15, 11 | resources hlavní programátor [50%]; programátor → programátor; baseline start none → 2021-04-21; baseline finish none → 2021-04-30 |
| 17 | Vytvoření testovacího prostředí | 2021-05-18 → 2021-05-03 (-15d) | 2021-05-31 → 2021-05-17 (-14d) |  |  |  | resources hlavní tester [50%]; tester → hlavní tester [50%]; tester; databázový specialista [20%]; baseline start none → 2021-05-03; baseline finish none → 2021-05-14 |
| 18 | Otestování aplikace v roli běžného uživatele | 2021-06-01 → 2021-05-17 (-15d) | 2021-06-04 → 2021-05-21 (-14d) |  | 2d → 1.17d |  | resources hlavní tester [50%]; tester → tester; baseline start none → 2021-05-17; baseline finish none → 2021-05-19 |
| 19 | Otestování administrátorské sekce v roli správce | 2021-06-01 → 2021-05-17 (-15d) | 2021-06-04 → 2021-05-21 (-14d) |  |  |  | resources hlavní tester [50%]; tester → tester; baseline start none → 2021-05-17; baseline finish none → 2021-05-19 |
| 20 | **Zprostředkování přístupů do portálů eIdentita a Datové schránky** | 2021-06-07 → 2021-05-21 (-17d) | 2021-06-23 → 2021-06-22 (-1d) | 13d → 21.51d |  |  | resources none → vedoucí projektu; baseline start none → 2021-05-20; baseline finish none → 2021-06-17 |
| 21 | Zjištění podmínek pro získání přístupů do portálu eIdentita | 2021-06-07 → 2021-05-21 (-17d) | 2021-06-10 → 2021-05-27 (-14d) |  | 2d → 1.17d |  | baseline start none → 2021-05-20; baseline finish none → 2021-05-25 |
| 22 | Vypracování a zaslání žádosti Ministerstvu vnitra | 2021-06-11 → 2021-06-08 (-3d) | 2021-06-14 → 2021-06-10 (-4d) |  | 2d → 1.17d | 21 → 21FS+8d | baseline start none → 2021-06-07; baseline finish none → 2021-06-08 |
| 23 | Nastavení komunikace mezi aplikací a portálem eIdentita | 2021-06-15 → 2021-06-10 (-5d) | 2021-06-16 → 2021-06-14 (-2d) | 2d → 2.17d | 2d → 1.17d |  | baseline start none → 2021-06-09; baseline finish none → 2021-06-10 |
| 24 | Nasazení skriptů pro autentizaci do backendu aplikace | 2021-06-17 → 2021-06-14 (-3d) | 2021-06-18 → 2021-06-16 (-2d) | 2d → 2.17d | 2d → 1.17d |  | baseline start none → 2021-06-11; baseline finish none → 2021-06-14 |
| 25 | Otestování přihlášení | 2021-06-21 → 2021-06-16 (-5d) | 2021-06-21 → 2021-06-18 (-3d) | 1d → 2d | 2d → 1.17d |  | resources programátor → tester; baseline start none → 2021-06-15; baseline finish none → 2021-06-16 |
| 26 | Zjištění podmínek pro získání přístupů do portálu Datové schránky | 2021-06-07 → 2021-05-21 (-17d) | 2021-06-10 → 2021-05-27 (-14d) |  |  |  | baseline start none → 2021-05-20; baseline finish none → 2021-05-25 |
| 27 | Vypracování a zaslání žádosti Ministerstvu vnitra | 2021-06-11 → 2021-06-07 (-4d) | 2021-06-14 → 2021-06-09 (-5d) | 2d → 2.17d |  | 26 → 26FS+7d | baseline start none → 2021-06-04; baseline finish none → 2021-06-07 |
| 28 | Nastavení komunikace mezi aplikací a portálem eIdentita | 2021-06-15 → 2021-06-09 (-6d) | 2021-06-16 → 2021-06-11 (-5d) | 2d → 2.17d |  |  | baseline start none → 2021-06-08; baseline finish none → 2021-06-09 |
| 29 | Nastavení identifikace Datové schránky na základě autentizovaného uživatele | 2021-06-17 → 2021-06-11 (-6d) | 2021-06-18 → 2021-06-16 (-2d) | 2d → 2.17d |  |  | baseline start none → 2021-06-10; baseline finish none → 2021-06-11 |
| 30 | Nasazení skriptů pro odeslání notifikací do backendu aplikace | 2021-06-21 → 2021-06-16 (-5d) | 2021-06-22 → 2021-06-18 (-4d) |  |  |  | baseline start none → 2021-06-14; baseline finish none → 2021-06-15 |
| 31 | Otestování notifikačního odesílání | 2021-06-23 → 2021-06-18 (-5d) | 2021-06-23 → 2021-06-22 (-1d) | 1d → 2d |  |  | resources programátor → tester; baseline start none → 2021-06-16; baseline finish none → 2021-06-17 |
| 32 | **Získání informací o povinnostech občanů vůči finančnímu úřadu** | 2021-06-24 → 2021-06-22 (-2d) | 2021-10-29 → 2021-10-12 (-17d) | 92d → 80.01d |  |  | resources none → vedoucí projektu; baseline start none → 2021-06-18; baseline finish none → 2021-10-07 |
| 33 | Vypracování a zaslání žádosti Ministerstvu financí o komunikační přístup do interních systémů finanční správy | 2021-09-02 → 2021-06-22 (-72d) | 2021-09-15 → 2021-06-29 (-78d) | 10d → 5.17d |  | 36 → 25, 31 | baseline start none → 2021-06-18; baseline finish none → 2021-06-24 |
| 34 | Propojení s interním systémem finanční správy | 2021-09-16 → 2021-07-06 (-72d) | 2021-09-23 → 2021-07-14 (-71d) | 6d → 6.17d |  | 33 → 33FS+5d | baseline start none → 2021-07-02; baseline finish none → 2021-07-09 |
| 35 | Analýza interních systémů finanční správy pro automatizovaný sběr informací | 2021-06-24 → 2021-07-14 (+20d) | 2021-08-11 → 2021-09-01 (+21d) |  |  | 25, 31 → 34 | resources systémový analytik → systémový analytik; procesní analytik; baseline start none → 2021-07-12; baseline finish none → 2021-08-27 |
| 36 | Vypracování reportu informací, které lze získávat automatizovaně | 2021-08-12 → 2021-09-01 (+20d) | 2021-09-01 → 2021-09-08 (+7d) | 15d → 5.17d |  |  | resources procesní analytik → procesní analytik; systémový analytik; baseline start none → 2021-08-30; baseline finish none → 2021-09-03 |
| 37 | Vytvoření skriptů pro získání informací | 2021-09-24 → 2021-09-08 (-16d) | 2021-10-07 → 2021-09-22 (-15d) | 10d → 9.5d |  | 34 → 36 | resources hlavní programátor [50%]; programátor → programátor; baseline start none → 2021-09-06; baseline finish none → 2021-09-17 |
| 38 | Otestování automatického sběru informací | 2021-10-08 → 2021-09-22 (-16d) | 2021-10-14 → 2021-09-29 (-15d) |  |  |  | resources hlavní programátor [50%]; programátor → tester; baseline start none → 2021-09-20; baseline finish none → 2021-09-24 |
| 39 | Vložení skriptů do backendu aplikace | 2021-10-15 → 2021-09-29 (-16d) | 2021-10-21 → 2021-10-04 (-17d) | 5d → 3.17d |  |  | resources hlavní programátor [50%]; programátor → programátor; baseline start none → 2021-09-27; baseline finish none → 2021-09-29 |
| 40 | Vytvoření skriptu pro pravidelné spouštění automatizovaného sběru informací | 2021-10-22 → 2021-10-04 (-18d) | 2021-10-29 → 2021-10-12 (-17d) | 6d → 5.83d |  |  | resources hlavní programátor [50%]; programátor → programátor; baseline start none → 2021-09-30; baseline finish none → 2021-10-07 |
| 41 | Analýza interních systémů finanční správy pro manuální sběr informací | 2021-06-24 → 2021-06-22 (-2d) | 2021-07-21 → 2021-07-20 (-1d) |  | 5d → 1.67d |  | resources systémový analytik → bysnys analytik; baseline start none → 2021-06-18; baseline finish none → 2021-07-15 |
| 42 | Vypracování reportu informací, které lze získat manuálně | 2021-07-22 → 2021-07-20 (-2d) | 2021-08-04 → 2021-08-03 (-1d) |  | 5d → 1.67d |  | resources procesní analytik → bysnys analytik; baseline start none → 2021-07-16; baseline finish none → 2021-07-29 |
| 43 | Kontaktování finanční správy ohledně výběru pracovníků | 2021-08-05 → 2021-08-03 (-2d) | 2021-09-01 → 2021-08-31 (-1d) |  | 5d → 1.67d |  | baseline start none → 2021-07-30; baseline finish none → 2021-08-26 |
| 44 | Vypracování seznamu pracovníků pro zadávání informací do systému | 2021-09-02 → 2021-08-31 (-2d) | 2021-09-21 → 2021-09-07 (-14d) | 14d → 5.17d | 5d → 1.67d |  | baseline start none → 2021-08-27; baseline finish none → 2021-09-02 |
| 45 | Vytvoření administrátorských účtů | 2021-09-22 → 2021-09-07 (-15d) | 2021-09-23 → 2021-09-09 (-14d) |  | 5d → 1.67d |  | resources hlavní programátor [50%]; programátor → programátor; baseline start none → 2021-09-03; baseline finish none → 2021-09-06 |
| 46 | Přidělení práv administrativních pracovníků | 2021-09-24 → 2021-09-09 (-15d) | 2021-09-24 → 2021-09-10 (-14d) | 1d → 1.17d | 5d → 1.67d |  | resources hlavní programátor [50%]; programátor → programátor; baseline start none → 2021-09-07; baseline finish none → 2021-09-07 |
| 47 | Zjištění kroků pro manuální zaznamenávání informací o povinnostech | 2021-09-27 → 2021-09-10 (-17d) | 2021-10-08 → 2021-09-24 (-14d) |  | 5d → 1.67d |  | baseline start none → 2021-09-08; baseline finish none → 2021-09-21 |
| 48 | Sepsání návodu k zadávání informací pro administrativní pracovníky | 2021-10-11 → 2021-09-24 (-17d) | 2021-10-22 → 2021-10-08 (-14d) |  | 5d → 1.67d |  | baseline start none → 2021-09-22; baseline finish none → 2021-10-05 |
| 49 | **Nasazení aplikace do produkčního prostředí** | 2021-11-01 → 2021-10-12 (-20d) | 2021-12-29 → 2021-11-22 (-37d) | 43d → 29.51d |  |  | resources none → vedoucí projektu; baseline start none → 2021-10-08; baseline finish none → 2021-11-17 |
| 50 | Výběr domény | 2021-11-01 → 2021-10-12 (-20d) | 2021-11-05 → 2021-10-15 (-21d) | 5d → 3.17d |  |  | baseline start none → 2021-10-08; baseline finish none → 2021-10-12 |
| 51 | Registrace a zakoupení domény | 2021-11-08 → 2021-10-15 (-24d) | 2021-11-10 → 2021-10-18 (-23d) | 3d → 1.17d |  |  | baseline start none → 2021-10-13; baseline finish none → 2021-10-13 |
| 52 | Výběr typu hostingu aplikace | 2021-11-11 → 2021-10-18 (-24d) | 2021-11-17 → 2021-10-20 (-28d) | 5d → 2d |  |  | baseline start none → 2021-10-14; baseline finish none → 2021-10-15 |
| 53 | Příprava prostředí pro všechny potřebné komponenty aplikace | 2021-11-18 → 2021-10-20 (-29d) | 2021-12-01 → 2021-11-10 (-21d) | 10d → 14.83d |  |  | baseline start none → 2021-10-18; baseline finish none → 2021-11-05 |
| 54 | Přesunutí aplikace z testovacího na produkční prostředí | 2021-12-02 → 2021-11-10 (-22d) | 2021-12-22 → 2021-11-17 (-35d) | 15d → 5.17d |  |  | baseline start none → 2021-11-08; baseline finish none → 2021-11-12 |
| 55 | Otestování aplikace v produkčním prostředí čili kontrola, zda migrace proběhla v pořádku | 2021-12-23 → 2021-11-17 (-36d) | 2021-12-29 → 2021-11-22 (-37d) | 5d → 3.17d |  |  | baseline start none → 2021-11-15; baseline finish none → 2021-11-17 |

## Version 5 (saved 2020-11-01, file 414_003_T02_PP_priloha_A_v1.mpp)

Note of the change: Dokončení PP

Last finish stays 2021-12-23.

Changed:

| ID | Task | Start | Finish | Duration | Total float | Predecessors |
| --- | --- | --- | --- | --- | --- | --- |
| 21 | Zjištění podmínek pro získání přístupů do portálu eIdentita |  |  |  |  | 19, 18 → 19 |
| 32 | **Získání informací o povinnostech občanů vůči finančnímu úřadu** |  | 2021-10-12 → 2021-10-15 (+3d) | 80.01d → 83.51d |  |  |
| 41 | Analýza interních systémů finanční správy pro manuální sběr informací | 2021-06-22 → 2021-06-29 (+7d) | 2021-07-20 → 2021-07-27 (+7d) |  | 1.67d → 0d | 25, 31 → 33 |
| 42 | Vypracování reportu informací, které lze získat manuálně | 2021-07-20 → 2021-07-27 (+7d) | 2021-08-03 → 2021-08-10 (+7d) |  | 1.67d → 0d |  |
| 43 | Kontaktování finanční správy ohledně výběru pracovníků | 2021-08-03 → 2021-08-10 (+7d) | 2021-08-31 → 2021-09-07 (+7d) |  | 1.67d → 0d |  |
| 44 | Vypracování seznamu pracovníků pro zadávání informací do systému | 2021-08-31 → 2021-09-07 (+7d) | 2021-09-07 → 2021-09-14 (+7d) |  | 1.67d → 0d |  |
| 45 | Vytvoření administrátorských účtů | 2021-09-07 → 2021-09-14 (+7d) | 2021-09-09 → 2021-09-16 (+7d) |  | 1.67d → 0d |  |
| 46 | Přidělení práv administrativních pracovníků | 2021-09-09 → 2021-09-16 (+7d) | 2021-09-10 → 2021-09-17 (+7d) |  | 1.67d → 0d |  |
| 47 | Zjištění kroků pro manuální zaznamenávání informací o povinnostech | 2021-09-10 → 2021-09-17 (+7d) | 2021-09-24 → 2021-10-01 (+7d) |  | 1.67d → 0d |  |
| 48 | Sepsání návodu k zadávání informací pro administrativní pracovníky | 2021-09-24 → 2021-10-01 (+7d) | 2021-10-08 → 2021-10-15 (+7d) |  | 1.67d → 0d |  |
| 49 | **Nasazení aplikace do produkčního prostředí** | 2021-10-12 → 2021-10-15 (+3d) | 2021-11-22 → 2021-11-26 (+4d) |  |  |  |
| 50 | Výběr domény | 2021-10-12 → 2021-10-15 (+3d) | 2021-10-15 → 2021-10-20 (+5d) |  |  |  |
| 51 | Registrace a zakoupení domény | 2021-10-15 → 2021-10-20 (+5d) | 2021-10-18 → 2021-10-21 (+3d) |  |  |  |
| 52 | Výběr typu hostingu aplikace | 2021-10-18 → 2021-10-21 (+3d) | 2021-10-20 → 2021-10-25 (+5d) |  |  |  |
| 53 | Příprava prostředí pro všechny potřebné komponenty aplikace | 2021-10-20 → 2021-10-25 (+5d) | 2021-11-10 → 2021-11-15 (+5d) |  |  |  |
| 54 | Přesunutí aplikace z testovacího na produkční prostředí | 2021-11-10 → 2021-11-15 (+5d) | 2021-11-17 → 2021-11-22 (+5d) |  |  |  |
| 55 | Otestování aplikace v produkčním prostředí čili kontrola, zda migrace proběhla v pořádku | 2021-11-17 → 2021-11-22 (+5d) | 2021-11-22 → 2021-11-26 (+4d) |  |  |  |
| 56 | Projektový nárazník | 2021-11-22 → 2021-11-26 (+4d) |  | 23.46d → 19.4d |  |  |

## Version 6 (saved 2020-11-21, file 414_003_T02_PZp_priloha_A.mpp)

Note of the change: Přechod z obecných zdrojů na konkrétní pracovníky

Last finish stays 2021-12-23.

Changed:

| ID | Task | Other |
| --- | --- | --- |
| 1 | **Návrh a testování webové aplikace** | resources vedoucí projektu [50%] → Duňa Líbalová [50%] |
| 2 | Příprava konceptuální úrovně modelu | resources databázový specialista → Ladislav Samek |
| 3 | Příprava technologické úrovně modelu | resources databázový specialista → Ladislav Samek |
| 4 | Příprava implementační úrovně modelu | resources hlavní programátor [50%] → Karel Kostelenec [50%] |
| 5 | Vytvoření návrhů jednotného vizuálního stylu aplikace | resources grafik → Štěpán Mareška |
| 6 | Výběr stylu a návrh vizualizace všech stránek aplikace | resources grafik → Štěpán Mareška |
| 7 | Vytvoření logiky celé aplikace | resources hlavní programátor [50%]; programátor → Karel Kostelenec [50%]; Renata Tůmová |
| 8 | Vytvoření databáze na základě datového modelu | resources databázový specialista → Ladislav Samek |
| 9 | Napojení databáze na backend aplikace | resources databázový specialista; programátor → Ladislav Samek; Renata Tůmová |
| 10 | Vytvoření administrátorské sekce aplikace | resources hlavní programátor [50%]; programátor → Karel Kostelenec [50%]; Renata Tůmová |
| 11 | Otestování programových kódů pomocí jednotkových testů | resources hlavní programátor [50%]; programátor → Karel Kostelenec [50%]; Renata Tůmová |
| 12 | Vytvoření HTML + CSS základu aplikace | resources grafik → Štěpán Mareška |
| 13 | Zavedení požadovaných uživatelských funkcionalit | resources programátor → Věra Voplakalová |
| 14 | Otestování a schválení grafického rozhraní aplikace | resources hlavní tester [50%]; tester → Jiřina Černovská [50%]; Ludmila Machová |
| 15 | Otestování a schválení zakomponovaných uživatelských funkcionalit | resources hlavní tester [50%]; tester → Jiřina Černovská [50%]; Ludmila Machová |
| 16 | Programové propojení frontendu a backendu | resources programátor → Renata Tůmová |
| 17 | Vytvoření testovacího prostředí | resources hlavní tester [50%]; tester; databázový specialista [20%] → Jiřina Černovská [50%]; Ludmila Machová; Ladislav Samek [20%] |
| 18 | Otestování aplikace v roli běžného uživatele | resources tester → Ludmila Machová |
| 19 | Otestování administrátorské sekce v roli správce | resources tester → Lucie Pelantová |
| 20 | **Zprostředkování přístupů do portálů eIdentita a Datové schránky** | resources vedoucí projektu → Duňa Líbalová |
| 21 | Zjištění podmínek pro získání přístupů do portálu eIdentita | resources IT technik → Oldřich Jareš |
| 22 | Vypracování a zaslání žádosti Ministerstvu vnitra | resources IT technik → Oldřich Jareš |
| 23 | Nastavení komunikace mezi aplikací a portálem eIdentita | resources programátor → Renata Tůmová |
| 24 | Nasazení skriptů pro autentizaci do backendu aplikace | resources programátor → Renata Tůmová |
| 25 | Otestování přihlášení | resources tester → Ludmila Machová |
| 26 | Zjištění podmínek pro získání přístupů do portálu Datové schránky | resources IT technik → Oliver Křížka |
| 27 | Vypracování a zaslání žádosti Ministerstvu vnitra | resources IT technik → Oliver Křížka |
| 28 | Nastavení komunikace mezi aplikací a portálem eIdentita | resources programátor → Věra Voplakalová |
| 29 | Nastavení identifikace Datové schránky na základě autentizovaného uživatele | resources programátor → Věra Voplakalová |
| 30 | Nasazení skriptů pro odeslání notifikací do backendu aplikace | resources programátor → Věra Voplakalová |
| 31 | Otestování notifikačního odesílání | resources tester → Lucie Pelantová |
| 32 | **Získání informací o povinnostech občanů vůči finančnímu úřadu** | resources vedoucí projektu → Duňa Líbalová |
| 33 | Vypracování a zaslání žádosti Ministerstvu financí o komunikační přístup do interních systémů finanční správy | resources IT technik → Oldřich Jareš |
| 34 | Propojení s interním systémem finanční správy | resources hlavní programátor [50%]; programátor → Karel Kostelenec [50%]; Renata Tůmová |
| 35 | Analýza interních systémů finanční správy pro automatizovaný sběr informací | resources systémový analytik; procesní analytik → Zbyněk Křivák; Pavla Šopíková |
| 36 | Vypracování reportu informací, které lze získávat automatizovaně | resources procesní analytik; systémový analytik → Pavla Šopíková; Zbyněk Křivák |
| 37 | Vytvoření skriptů pro získání informací | resources programátor → Renata Tůmová |
| 38 | Otestování automatického sběru informací | resources tester → Ludmila Machová |
| 39 | Vložení skriptů do backendu aplikace | resources programátor → Renata Tůmová |
| 40 | Vytvoření skriptu pro pravidelné spouštění automatizovaného sběru informací | resources programátor → Renata Tůmová |
| 41 | Analýza interních systémů finanční správy pro manuální sběr informací | resources bysnys analytik → Alena Radová |
| 42 | Vypracování reportu informací, které lze získat manuálně | resources bysnys analytik → Alena Radová |
| 43 | Kontaktování finanční správy ohledně výběru pracovníků | resources bysnys analytik → Alena Radová |
| 44 | Vypracování seznamu pracovníků pro zadávání informací do systému | resources bysnys analytik → Alena Radová |
| 45 | Vytvoření administrátorských účtů | resources programátor → Věra Voplakalová |
| 46 | Přidělení práv administrativních pracovníků | resources programátor → Věra Voplakalová |
| 47 | Zjištění kroků pro manuální zaznamenávání informací o povinnostech | resources procesní analytik → Pavla Šopíková |
| 48 | Sepsání návodu k zadávání informací pro administrativní pracovníky | resources procesní analytik → Pavla Šopíková |
| 49 | **Nasazení aplikace do produkčního prostředí** | resources vedoucí projektu → Duňa Líbalová |
| 50 | Výběr domény | resources IT technik → Oldřich Jareš |
| 51 | Registrace a zakoupení domény | resources IT technik → Oldřich Jareš |
| 52 | Výběr typu hostingu aplikace | resources IT technik → Oldřich Jareš |
| 53 | Příprava prostředí pro všechny potřebné komponenty aplikace | resources IT technik → Oldřich Jareš |
| 54 | Přesunutí aplikace z testovacího na produkční prostředí | resources IT technik → Oldřich Jareš |
| 55 | Otestování aplikace v produkčním prostředí čili kontrola, zda migrace proběhla v pořádku | resources IT technik → Oldřich Jareš |

## Version 7 (data date 2021-06-30, saved 2020-11-21, file 414_003_T02_PZp_priloha_A.mpp)

Note of the change: Komunitnutí KOKOTINY!!!

Last finish 2021-12-23 → 2021-12-29 (+6d). Complete tasks 0 → 29.

Changed:

| ID | Task | Start | Finish | Duration | Complete | Total float | Other |
| --- | --- | --- | --- | --- | --- | --- | --- |
| 1 | **Návrh a testování webové aplikace** | 2021-03-01 A | 2021-05-21 → 2021-05-25 A (+4d) | 59.51d → 61.22d | 0% → 100% | 0d → none | baseline finish 2021-05-19 → 2021-05-21 |
| 2 | Příprava konceptuální úrovně modelu | 2021-03-01 A | 2021-03-03 → 2021-03-05 A (+2d) | 3d → 4.11d | 0% → 100% | 0d → none |  |
| 3 | Příprava technologické úrovně modelu | 2021-03-04 → 2021-03-05 A (+1d) | 2021-03-08 → 2021-03-10 A (+2d) | 3d → 3.21d | 0% → 100% | 3.51d → none |  |
| 4 | Příprava implementační úrovně modelu | 2021-03-09 → 2021-03-10 A (+1d) | 2021-03-12 → 2021-03-17 A (+5d) | 4d → 4.87d | 0% → 100% | 3.51d → none |  |
| 5 | Vytvoření návrhů jednotného vizuálního stylu aplikace | 2021-03-01 A | 2021-03-08 → 2021-03-05 A (-3d) | 5.17d → 5d | 0% → 100% | 0d → none | baseline finish 2021-03-05 → 2021-03-08 |
| 6 | Výběr stylu a návrh vizualizace všech stránek aplikace | 2021-03-08 A | 2021-03-11 A | 3d → 3.18d | 0% → 100% | 0d → none | baseline finish 2021-03-10 → 2021-03-11 |
| 7 | Vytvoření logiky celé aplikace | 2021-03-15 → 2021-03-17 A (+2d) | 2021-03-26 → 2021-04-02 A (+7d) | 10d → 12.1d | 0% → 100% | 3.51d → none |  |
| 8 | Vytvoření databáze na základě datového modelu | 2021-03-29 → 2021-04-02 A (+4d) | 2021-04-02 → 2021-04-09 A (+7d) | 4.83d → 5d | 0% → 100% | 3.51d → none |  |
| 9 | Napojení databáze na backend aplikace | 2021-04-02 → 2021-04-09 A (+7d) | 2021-04-06 → 2021-04-13 A (+7d) |  | 0% → 100% | 3.51d → none | baseline start 2021-04-05 → 2021-04-02 |
| 10 | Vytvoření administrátorské sekce aplikace | 2021-04-06 → 2021-04-13 A (+7d) | 2021-04-12 → 2021-04-19 A (+7d) | 4d → 4.51d | 0% → 100% | 3.51d → none | baseline start 2021-04-07 → 2021-04-06 |
| 11 | Otestování programových kódů pomocí jednotkových testů | 2021-04-12 → 2021-04-19 A (+7d) | 2021-04-15 → 2021-04-23 A (+8d) | 3d → 3.42d | 0% → 100% | 3.51d → none | baseline start 2021-04-13 → 2021-04-12 |
| 12 | Vytvoření HTML + CSS základu aplikace | 2021-03-11 A | 2021-03-23 → 2021-03-24 A (+1d) | 8.17d → 9.26d | 0% → 100% | 0d → none | baseline finish 2021-03-22 → 2021-03-23 |
| 13 | Zavedení požadovaných uživatelských funkcionalit | 2021-03-23 → 2021-03-24 A (+1d) | 2021-04-01 → 2021-04-02 A (+1d) |  | 0% → 100% | 0d → none | baseline finish 2021-03-31 → 2021-04-01 |
| 14 | Otestování a schválení grafického rozhraní aplikace | 2021-04-01 → 2021-04-02 A (+1d) | 2021-04-15 → 2021-04-16 A (+1d) |  | 0% → 100% | 0d → none | baseline finish 2021-04-14 → 2021-04-15 |
| 15 | Otestování a schválení zakomponovaných uživatelských funkcionalit | 2021-04-15 → 2021-04-16 A (+1d) | 2021-04-21 → 2021-04-22 A (+1d) | 4d → 4.17d | 0% → 100% | 0d → none | baseline finish 2021-04-20 → 2021-04-21 |
| 16 | Programové propojení frontendu a backendu | 2021-04-21 → 2021-04-23 A (+2d) | 2021-05-03 → 2021-05-05 A (+2d) | 8.17d → 8d | 0% → 100% | 0d → none | baseline finish 2021-04-30 → 2021-05-03 |
| 17 | Vytvoření testovacího prostředí | 2021-05-03 → 2021-05-05 A (+2d) | 2021-05-17 → 2021-05-19 A (+2d) |  | 0% → 100% | 0d → none | baseline finish 2021-05-14 → 2021-05-17 |
| 18 | Otestování aplikace v roli běžného uživatele | 2021-05-17 → 2021-05-19 A (+2d) | 2021-05-21 → 2021-05-25 A (+4d) |  | 0% → 100% | 153.93d → none | baseline finish 2021-05-19 → 2021-05-21 |
| 19 | Otestování administrátorské sekce v roli správce | 2021-05-17 → 2021-05-19 A (+2d) | 2021-05-21 → 2021-05-25 A (+4d) |  | 0% → 100% | 0d → none | baseline finish 2021-05-19 → 2021-05-21 |
| 20 | **Zprostředkování přístupů do portálů eIdentita a Datové schránky** | 2021-05-21 → 2021-05-25 A (+4d) | 2021-06-22 → 2021-06-25 A (+3d) | 21.51d → 23.46d | 0% → 100% | 0d → none | baseline start 2021-05-20 → 2021-05-21; baseline finish 2021-06-17 → 2021-06-22 |
| 21 | Zjištění podmínek pro získání přístupů do portálu eIdentita | 2021-05-21 → 2021-05-25 A (+4d) | 2021-05-27 → 2021-05-31 A (+4d) |  | 0% → 100% | 1.17d → none | baseline start 2021-05-20 → 2021-05-21; baseline finish 2021-05-25 → 2021-05-27 |
| 22 | Vypracování a zaslání žádosti Ministerstvu vnitra | 2021-06-08 → 2021-06-10 A (+2d) | 2021-06-10 → 2021-06-15 A (+5d) | 2d → 2.86d | 0% → 100% | 1.17d → none | baseline start 2021-06-07 → 2021-06-08; baseline finish 2021-06-08 → 2021-06-10 |
| 23 | Nastavení komunikace mezi aplikací a portálem eIdentita | 2021-06-10 → 2021-06-15 A (+5d) | 2021-06-14 → 2021-06-17 A (+3d) | 2.17d → 2d | 0% → 100% | 1.17d → none | baseline start 2021-06-09 → 2021-06-10; baseline finish 2021-06-10 → 2021-06-14 |
| 24 | Nasazení skriptů pro autentizaci do backendu aplikace | 2021-06-14 → 2021-06-17 A (+3d) | 2021-06-16 → 2021-06-21 A (+5d) | 2.17d → 2.39d | 0% → 100% | 1.17d → none | baseline start 2021-06-11 → 2021-06-14; baseline finish 2021-06-14 → 2021-06-16 |
| 25 | Otestování přihlášení | 2021-06-16 → 2021-06-21 A (+5d) | 2021-06-18 → 2021-06-23 A (+5d) |  | 0% → 100% | 1.17d → none | baseline start 2021-06-15 → 2021-06-16; baseline finish 2021-06-16 → 2021-06-18 |
| 26 | Zjištění podmínek pro získání přístupů do portálu Datové schránky | 2021-05-21 → 2021-05-25 A (+4d) | 2021-05-27 → 2021-05-31 A (+4d) | 4d → 4.64d | 0% → 100% | 0d → none | baseline start 2021-05-20 → 2021-05-21; baseline finish 2021-05-25 → 2021-05-27 |
| 27 | Vypracování a zaslání žádosti Ministerstvu vnitra | 2021-06-07 → 2021-06-09 A (+2d) | 2021-06-09 → 2021-06-11 A (+2d) | 2.17d → 2d | 0% → 100% | 0d → none | baseline start 2021-06-04 → 2021-06-07; baseline finish 2021-06-07 → 2021-06-09 |
| 28 | Nastavení komunikace mezi aplikací a portálem eIdentita | 2021-06-09 → 2021-06-11 A (+2d) | 2021-06-11 → 2021-06-16 A (+5d) | 2.17d → 3.09d | 0% → 100% | 0d → none | baseline start 2021-06-08 → 2021-06-09; baseline finish 2021-06-09 → 2021-06-11 |
| 29 | Nastavení identifikace Datové schránky na základě autentizovaného uživatele | 2021-06-11 → 2021-06-16 A (+5d) | 2021-06-16 → 2021-06-21 A (+5d) | 2.17d → 2.41d | 0% → 100% | 0d → none | baseline start 2021-06-10 → 2021-06-11; baseline finish 2021-06-11 → 2021-06-16 |
| 30 | Nasazení skriptů pro odeslání notifikací do backendu aplikace | 2021-06-16 → 2021-06-21 A (+5d) | 2021-06-18 → 2021-06-23 A (+5d) | 2d → 2.32d | 0% → 100% | 0d → none | baseline start 2021-06-14 → 2021-06-16; baseline finish 2021-06-15 → 2021-06-18 |
| 31 | Otestování notifikačního odesílání | 2021-06-18 → 2021-06-23 A (+5d) | 2021-06-22 → 2021-06-25 A (+3d) |  | 0% → 100% | 0d → none | baseline start 2021-06-16 → 2021-06-18; baseline finish 2021-06-17 → 2021-06-22 |
| 32 | **Získání informací o povinnostech občanů vůči finančnímu úřadu** | 2021-06-22 → 2021-06-25 A (+3d) | 2021-10-15 → 2021-10-21 (+6d) | 83.51d → 83.55d | 0% → 2% |  | baseline start 2021-06-18 → 2021-06-22; baseline finish 2021-10-07 → 2021-10-15 |
| 33 | Vypracování a zaslání žádosti Ministerstvu financí o komunikační přístup do interních systémů finanční správy | 2021-06-22 → 2021-06-25 A (+3d) | 2021-06-29 → 2021-07-02 (+3d) | 5.17d → 5.21d | 0% → 64% |  | baseline start 2021-06-18 → 2021-06-22; baseline finish 2021-06-24 → 2021-06-29 |
| 34 | Propojení s interním systémem finanční správy | 2021-07-06 → 2021-07-09 (+3d) | 2021-07-14 → 2021-07-20 (+6d) |  |  |  | baseline start 2021-07-02 → 2021-07-06; baseline finish 2021-07-09 → 2021-07-14 |
| 35 | Analýza interních systémů finanční správy pro automatizovaný sběr informací | 2021-07-14 → 2021-07-20 (+6d) | 2021-09-01 → 2021-09-07 (+6d) |  |  |  | baseline start 2021-07-12 → 2021-07-14; baseline finish 2021-08-27 → 2021-09-01 |
| 36 | Vypracování reportu informací, které lze získávat automatizovaně | 2021-09-01 → 2021-09-07 (+6d) | 2021-09-08 → 2021-09-14 (+6d) |  |  |  | baseline start 2021-08-30 → 2021-09-01; baseline finish 2021-09-03 → 2021-09-08 |
| 37 | Vytvoření skriptů pro získání informací | 2021-09-08 → 2021-09-14 (+6d) | 2021-09-22 → 2021-09-27 (+5d) |  |  |  | baseline start 2021-09-06 → 2021-09-08; baseline finish 2021-09-17 → 2021-09-22 |
| 38 | Otestování automatického sběru informací | 2021-09-22 → 2021-09-27 (+5d) | 2021-09-29 → 2021-10-04 (+5d) |  |  |  | baseline start 2021-09-20 → 2021-09-22; baseline finish 2021-09-24 → 2021-09-29 |
| 39 | Vložení skriptů do backendu aplikace | 2021-09-29 → 2021-10-04 (+5d) | 2021-10-04 → 2021-10-07 (+3d) |  |  |  | baseline start 2021-09-27 → 2021-09-29; baseline finish 2021-09-29 → 2021-10-04 |
| 40 | Vytvoření skriptu pro pravidelné spouštění automatizovaného sběru informací | 2021-10-04 → 2021-10-07 (+3d) | 2021-10-12 → 2021-10-15 (+3d) |  |  |  | baseline start 2021-09-30 → 2021-10-04; baseline finish 2021-10-07 → 2021-10-12 |
| 41 | Analýza interních systémů finanční správy pro manuální sběr informací | 2021-06-29 → 2021-07-02 (+3d) | 2021-07-27 → 2021-07-30 (+3d) |  |  |  | baseline start 2021-06-18 → 2021-06-29; baseline finish 2021-07-15 → 2021-07-27 |
| 42 | Vypracování reportu informací, které lze získat manuálně | 2021-07-27 → 2021-07-30 (+3d) | 2021-08-10 → 2021-08-13 (+3d) |  |  |  | baseline start 2021-07-16 → 2021-07-27; baseline finish 2021-07-29 → 2021-08-10 |
| 43 | Kontaktování finanční správy ohledně výběru pracovníků | 2021-08-10 → 2021-08-13 (+3d) | 2021-09-07 → 2021-09-10 (+3d) |  |  |  | baseline start 2021-07-30 → 2021-08-10; baseline finish 2021-08-26 → 2021-09-07 |
| 44 | Vypracování seznamu pracovníků pro zadávání informací do systému | 2021-09-07 → 2021-09-10 (+3d) | 2021-09-14 → 2021-09-20 (+6d) |  |  |  | baseline start 2021-08-27 → 2021-09-07; baseline finish 2021-09-02 → 2021-09-14 |
| 45 | Vytvoření administrátorských účtů | 2021-09-14 → 2021-09-20 (+6d) | 2021-09-16 → 2021-09-22 (+6d) |  |  |  | baseline start 2021-09-03 → 2021-09-14; baseline finish 2021-09-06 → 2021-09-16 |
| 46 | Přidělení práv administrativních pracovníků | 2021-09-16 → 2021-09-22 (+6d) | 2021-09-17 → 2021-09-23 (+6d) |  |  |  | baseline start 2021-09-07 → 2021-09-16; baseline finish 2021-09-07 → 2021-09-17 |
| 47 | Zjištění kroků pro manuální zaznamenávání informací o povinnostech | 2021-09-17 → 2021-09-23 (+6d) | 2021-10-01 → 2021-10-07 (+6d) |  |  |  | baseline start 2021-09-08 → 2021-09-17; baseline finish 2021-09-21 → 2021-10-01 |
| 48 | Sepsání návodu k zadávání informací pro administrativní pracovníky | 2021-10-01 → 2021-10-07 (+6d) | 2021-10-15 → 2021-10-21 (+6d) |  |  |  | baseline start 2021-09-22 → 2021-10-01; baseline finish 2021-10-05 → 2021-10-15 |
| 49 | **Nasazení aplikace do produkčního prostředí** | 2021-10-15 → 2021-10-21 (+6d) | 2021-11-26 → 2021-12-01 (+5d) |  |  |  | baseline start 2021-10-08 → 2021-10-15; baseline finish 2021-11-17 → 2021-11-26 |
| 50 | Výběr domény | 2021-10-15 → 2021-10-21 (+6d) | 2021-10-20 → 2021-10-26 (+6d) |  |  |  | baseline start 2021-10-08 → 2021-10-15; baseline finish 2021-10-12 → 2021-10-20 |
| 51 | Registrace a zakoupení domény | 2021-10-20 → 2021-10-26 (+6d) | 2021-10-21 → 2021-10-27 (+6d) |  |  |  | baseline start 2021-10-13 → 2021-10-20; baseline finish 2021-10-13 → 2021-10-21 |
| 52 | Výběr typu hostingu aplikace | 2021-10-21 → 2021-10-27 (+6d) | 2021-10-25 → 2021-10-29 (+4d) |  |  |  | baseline start 2021-10-14 → 2021-10-21; baseline finish 2021-10-15 → 2021-10-25 |
| 53 | Příprava prostředí pro všechny potřebné komponenty aplikace | 2021-10-25 → 2021-10-29 (+4d) | 2021-11-15 → 2021-11-19 (+4d) |  |  |  | baseline start 2021-10-18 → 2021-10-25; baseline finish 2021-11-05 → 2021-11-15 |
| 54 | Přesunutí aplikace z testovacího na produkční prostředí | 2021-11-15 → 2021-11-19 (+4d) | 2021-11-22 → 2021-11-26 (+4d) |  |  |  | baseline start 2021-11-08 → 2021-11-15; baseline finish 2021-11-12 → 2021-11-22 |
| 55 | Otestování aplikace v produkčním prostředí čili kontrola, zda migrace proběhla v pořádku | 2021-11-22 → 2021-11-26 (+4d) | 2021-11-26 → 2021-12-01 (+5d) |  |  |  | baseline start 2021-11-15 → 2021-11-22; baseline finish 2021-11-17 → 2021-11-26 |
| 56 | Projektový nárazník | 2021-11-26 → 2021-12-01 (+5d) | 2021-12-23 → 2021-12-29 (+6d) |  |  |  | baseline start 2021-03-01 → 2021-11-26; baseline finish 2021-03-01 → 2021-12-23 |

## Version 8 (data date 2021-06-30, saved 2020-11-27, file 414_003_T02_PZp_priloha_A.mpp)

Note of the change: Update hovnosraček :-)

Last finish 2021-12-29 → 2021-12-23 (-6d).

Changed:

| ID | Task | Start | Finish | Duration | Complete |
| --- | --- | --- | --- | --- | --- |
| 1 | **Návrh a testování webové aplikace** |  | 2021-05-25 A → 2021-05-26 A (+1d) | 61.22d → 62.7d |  |
| 2 | Příprava konceptuální úrovně modelu |  | 2021-03-05 A → 2021-03-03 A (-2d) | 4.11d → 3d |  |
| 3 | Příprava technologické úrovně modelu | 2021-03-05 A → 2021-03-04 A (-1d) |  | 3.21d → 4.1d |  |
| 4 | Příprava implementační úrovně modelu |  | 2021-03-17 A → 2021-03-16 A (-1d) | 4.87d → 4d |  |
| 5 | Vytvoření návrhů jednotného vizuálního stylu aplikace |  | 2021-03-05 A → 2021-03-08 A (+3d) | 5d → 5.17d |  |
| 6 | Výběr stylu a návrh vizualizace všech stránek aplikace |  |  | 3.18d → 3.32d |  |
| 7 | Vytvoření logiky celé aplikace | 2021-03-17 A → 2021-03-16 A (-1d) | 2021-04-02 A → 2021-03-31 A (-2d) | 12.1d → 11.02d |  |
| 8 | Vytvoření databáze na základě datového modelu | 2021-04-02 A → 2021-03-31 A (-2d) | 2021-04-09 A → 2021-04-07 A (-2d) | 5d → 5.1d |  |
| 9 | Napojení databáze na backend aplikace | 2021-04-09 A → 2021-04-07 A (-2d) | 2021-04-13 A → 2021-04-09 A (-4d) | 2d → 2.19d |  |
| 10 | Vytvoření administrátorské sekce aplikace | 2021-04-13 A → 2021-04-09 A (-4d) | 2021-04-19 A → 2021-04-15 A (-4d) | 4.51d → 4.37d |  |
| 11 | Otestování programových kódů pomocí jednotkových testů | 2021-04-19 A → 2021-04-15 A (-4d) | 2021-04-23 A → 2021-04-20 A (-3d) | 3.42d → 3d |  |
| 12 | Vytvoření HTML + CSS základu aplikace |  | 2021-03-24 A → 2021-03-23 A (-1d) | 9.26d → 8.17d |  |
| 13 | Zavedení požadovaných uživatelských funkcionalit | 2021-03-24 A → 2021-03-23 A (-1d) |  | 7d → 7.43d |  |
| 14 | Otestování a schválení grafického rozhraní aplikace |  |  | 10d → 10.33d |  |
| 15 | Otestování a schválení zakomponovaných uživatelských funkcionalit |  |  | 4.17d → 4.56d |  |
| 16 | Programové propojení frontendu a backendu | 2021-04-23 A → 2021-04-22 A (-1d) |  | 8d → 8.89d |  |
| 17 | Vytvoření testovacího prostředí |  | 2021-05-19 A → 2021-05-20 A (+1d) | 10d → 10.54d |  |
| 18 | Otestování aplikace v roli běžného uživatele | 2021-05-19 A → 2021-05-20 A (+1d) | 2021-05-25 A → 2021-05-26 A (+1d) | 4d → 4.29d |  |
| 19 | Otestování administrátorské sekce v roli správce | 2021-05-19 A → 2021-05-20 A (+1d) | 2021-05-25 A → 2021-05-26 A (+1d) |  |  |
| 20 | **Zprostředkování přístupů do portálů eIdentita a Datové schránky** | 2021-05-25 A → 2021-05-26 A (+1d) | 2021-06-25 A → 2021-06-28 A (+3d) | 23.46d → 23.05d |  |
| 21 | Zjištění podmínek pro získání přístupů do portálu eIdentita | 2021-05-25 A → 2021-05-26 A (+1d) | 2021-05-31 A → 2021-06-01 A (+1d) | 4d → 4.1d |  |
| 22 | Vypracování a zaslání žádosti Ministerstvu vnitra | 2021-06-10 A → 2021-06-11 A (+1d) |  | 2.86d → 2d |  |
| 23 | Nastavení komunikace mezi aplikací a portálem eIdentita |  |  | 2d → 2.17d |  |
| 24 | Nasazení skriptů pro autentizaci do backendu aplikace |  | 2021-06-21 A → 2021-06-23 A (+2d) | 2.39d → 3.86d |  |
| 25 | Otestování přihlášení | 2021-06-21 A → 2021-06-23 A (+2d) | 2021-06-23 A → 2021-06-25 A (+2d) |  |  |
| 26 | Zjištění podmínek pro získání přístupů do portálu Datové schránky | 2021-05-25 A → 2021-05-26 A (+1d) | 2021-05-31 A → 2021-06-01 A (+1d) | 4.64d → 4d |  |
| 27 | Vypracování a zaslání žádosti Ministerstvu vnitra | 2021-06-09 A → 2021-06-10 A (+1d) | 2021-06-11 A → 2021-06-14 A (+3d) | 2d → 2.57d |  |
| 28 | Nastavení komunikace mezi aplikací a portálem eIdentita | 2021-06-11 A → 2021-06-14 A (+3d) | 2021-06-16 A → 2021-06-17 A (+1d) | 3.09d → 2.48d |  |
| 29 | Nastavení identifikace Datové schránky na základě autentizovaného uživatele | 2021-06-16 A → 2021-06-17 A (+1d) | 2021-06-21 A → 2021-06-22 A (+1d) | 2.41d → 2.91d |  |
| 30 | Nasazení skriptů pro odeslání notifikací do backendu aplikace | 2021-06-21 A → 2021-06-22 A (+1d) | 2021-06-23 A → 2021-06-24 A (+1d) | 2.32d → 2.09d |  |
| 31 | Otestování notifikačního odesílání | 2021-06-23 A → 2021-06-24 A (+1d) | 2021-06-25 A → 2021-06-28 A (+3d) |  |  |
| 32 | **Získání informací o povinnostech občanů vůči finančnímu úřadu** | 2021-06-25 A → 2021-06-28 A (+3d) | 2021-10-21 → 2021-10-22 (+1d) | 83.55d → 83.88d |  |
| 33 | Vypracování a zaslání žádosti Ministerstvu financí o komunikační přístup do interních systémů finanční správy | 2021-06-25 A → 2021-06-28 A (+3d) | 2021-07-02 → 2021-07-05 (+3d) | 5.21d → 5.54d | 64% → 46% |
| 34 | Propojení s interním systémem finanční správy | 2021-07-09 → 2021-07-13 (+4d) | 2021-07-20 → 2021-07-21 (+1d) |  |  |
| 35 | Analýza interních systémů finanční správy pro automatizovaný sběr informací | 2021-07-20 → 2021-07-21 (+1d) | 2021-09-07 → 2021-09-08 (+1d) |  |  |
| 36 | Vypracování reportu informací, které lze získávat automatizovaně | 2021-09-07 → 2021-09-08 (+1d) | 2021-09-14 → 2021-09-15 (+1d) |  |  |
| 37 | Vytvoření skriptů pro získání informací | 2021-09-14 → 2021-09-15 (+1d) | 2021-09-27 → 2021-09-28 (+1d) |  |  |
| 38 | Otestování automatického sběru informací | 2021-09-27 → 2021-09-28 (+1d) | 2021-10-04 → 2021-10-05 (+1d) |  |  |
| 39 | Vložení skriptů do backendu aplikace | 2021-10-04 → 2021-10-05 (+1d) | 2021-10-07 → 2021-10-11 (+4d) |  |  |
| 40 | Vytvoření skriptu pro pravidelné spouštění automatizovaného sběru informací | 2021-10-07 → 2021-10-11 (+4d) | 2021-10-15 → 2021-10-18 (+3d) |  |  |
| 41 | Analýza interních systémů finanční správy pro manuální sběr informací | 2021-07-02 → 2021-07-06 (+4d) | 2021-07-30 → 2021-08-02 (+3d) |  |  |
| 42 | Vypracování reportu informací, které lze získat manuálně | 2021-07-30 → 2021-08-03 (+4d) | 2021-08-13 → 2021-08-16 (+3d) |  |  |
| 43 | Kontaktování finanční správy ohledně výběru pracovníků | 2021-08-13 → 2021-08-17 (+4d) | 2021-09-10 → 2021-09-13 (+3d) |  |  |
| 44 | Vypracování seznamu pracovníků pro zadávání informací do systému | 2021-09-10 → 2021-09-14 (+4d) | 2021-09-20 → 2021-09-21 (+1d) |  |  |
| 45 | Vytvoření administrátorských účtů | 2021-09-20 → 2021-09-21 (+1d) | 2021-09-22 → 2021-09-23 (+1d) |  |  |
| 46 | Přidělení práv administrativních pracovníků | 2021-09-22 → 2021-09-23 (+1d) | 2021-09-23 → 2021-09-24 (+1d) |  |  |
| 47 | Zjištění kroků pro manuální zaznamenávání informací o povinnostech | 2021-09-23 → 2021-09-24 (+1d) | 2021-10-07 → 2021-10-08 (+1d) |  |  |
| 48 | Sepsání návodu k zadávání informací pro administrativní pracovníky | 2021-10-07 → 2021-10-08 (+1d) | 2021-10-21 → 2021-10-22 (+1d) |  |  |
| 49 | **Nasazení aplikace do produkčního prostředí** | 2021-10-21 → 2021-10-22 (+1d) | 2021-12-01 → 2021-12-02 (+1d) |  |  |
| 50 | Výběr domény | 2021-10-21 → 2021-10-22 (+1d) | 2021-10-26 → 2021-10-27 (+1d) |  |  |
| 51 | Registrace a zakoupení domény | 2021-10-26 → 2021-10-27 (+1d) | 2021-10-27 → 2021-10-28 (+1d) |  |  |
| 52 | Výběr typu hostingu aplikace | 2021-10-27 → 2021-10-28 (+1d) | 2021-10-29 → 2021-11-01 (+3d) |  |  |
| 53 | Příprava prostředí pro všechny potřebné komponenty aplikace | 2021-10-29 → 2021-11-01 (+3d) | 2021-11-19 → 2021-11-22 (+3d) |  |  |
| 54 | Přesunutí aplikace z testovacího na produkční prostředí | 2021-11-19 → 2021-11-22 (+3d) | 2021-11-26 → 2021-11-29 (+3d) |  |  |
| 55 | Otestování aplikace v produkčním prostředí čili kontrola, zda migrace proběhla v pořádku | 2021-11-26 → 2021-11-29 (+3d) | 2021-12-01 → 2021-12-02 (+1d) |  |  |
| 56 | Projektový nárazník | 2021-12-01 → 2021-12-02 (+1d) | 2021-12-29 → 2021-12-23 (-6d) | 19.4d → 14.59d |  |

## Version 9 (data date 2021-06-30, saved 2020-12-04, file 414_003_T02_RP_priloha_A.mpp)

Note of the change: Přeplánování zdrojů

Last finish 2021-12-23 → 2021-12-28 (+5d).

Changed:

| ID | Task | Start | Finish | Duration | Total float | Other |
| --- | --- | --- | --- | --- | --- | --- |
| 32 | **Získání informací o povinnostech občanů vůči finančnímu úřadu** |  | 2021-10-22 → 2021-10-27 (+5d) | 83.88d → 87.05d |  | resources Duňa Líbalová → Eliška Schaumannová [50%] |
| 34 | Propojení s interním systémem finanční správy | 2021-07-13 → 2021-07-14 (+1d) | 2021-07-21 → 2021-07-22 (+1d) |  | 3.5d → 5.67d | constraint none → start no earlier than 2021-07-14 |
| 35 | Analýza interních systémů finanční správy pro automatizovaný sběr informací | 2021-07-21 → 2021-07-22 (+1d) | 2021-09-08 → 2021-09-09 (+1d) |  | 3.5d → 5.67d | resources Zbyněk Křivák; Pavla Šopíková → Vladimír Psohlavec; Daniel Prodělal |
| 36 | Vypracování reportu informací, které lze získávat automatizovaně | 2021-09-08 → 2021-09-09 (+1d) | 2021-09-15 → 2021-09-16 (+1d) |  | 3.5d → 5.67d | resources Pavla Šopíková; Zbyněk Křivák → Zbyněk Křivák; Daniel Prodělal |
| 37 | Vytvoření skriptů pro získání informací | 2021-09-15 → 2021-09-16 (+1d) | 2021-09-28 → 2021-09-29 (+1d) |  | 3.5d → 5.67d | resources Renata Tůmová → David Klesl |
| 38 | Otestování automatického sběru informací | 2021-09-28 → 2021-09-29 (+1d) | 2021-10-05 → 2021-10-06 (+1d) |  | 3.5d → 5.67d |  |
| 39 | Vložení skriptů do backendu aplikace | 2021-10-05 → 2021-10-06 (+1d) | 2021-10-11 → 2021-10-12 (+1d) |  | 3.5d → 5.67d | resources Renata Tůmová → Karel Kostelenec [50%]; David Klesl [50%] |
| 40 | Vytvoření skriptu pro pravidelné spouštění automatizovaného sběru informací | 2021-10-11 → 2021-10-12 (+1d) | 2021-10-18 → 2021-10-19 (+1d) |  | 3.5d → 5.67d | resources Renata Tůmová → Karel Kostelenec [50%]; David Klesl [50%] |
| 45 | Vytvoření administrátorských účtů |  | 2021-09-23 → 2021-09-27 (+4d) | 2d → 4d |  | resources Věra Voplakalová → Karel Kostelenec [50%] |
| 46 | Přidělení práv administrativních pracovníků | 2021-09-23 → 2021-09-27 (+4d) | 2021-09-24 → 2021-09-29 (+5d) | 1.17d → 2.34d |  | resources Věra Voplakalová → Karel Kostelenec [50%] |
| 47 | Zjištění kroků pro manuální zaznamenávání informací o povinnostech | 2021-09-24 → 2021-09-29 (+5d) | 2021-10-08 → 2021-10-13 (+5d) |  |  | resources Pavla Šopíková → Daniel Prodělal |
| 48 | Sepsání návodu k zadávání informací pro administrativní pracovníky | 2021-10-08 → 2021-10-13 (+5d) | 2021-10-22 → 2021-10-27 (+5d) |  |  |  |
| 49 | **Nasazení aplikace do produkčního prostředí** | 2021-10-22 → 2021-10-27 (+5d) | 2021-12-02 → 2021-12-08 (+6d) |  |  | resources Duňa Líbalová → Eliška Schaumannová [50%] |
| 50 | Výběr domény | 2021-10-22 → 2021-10-27 (+5d) | 2021-10-27 → 2021-11-01 (+5d) |  |  |  |
| 51 | Registrace a zakoupení domény | 2021-10-27 → 2021-11-01 (+5d) | 2021-10-28 → 2021-11-02 (+5d) |  |  |  |
| 52 | Výběr typu hostingu aplikace | 2021-10-28 → 2021-11-02 (+5d) | 2021-11-01 → 2021-11-04 (+3d) |  |  |  |
| 53 | Příprava prostředí pro všechny potřebné komponenty aplikace | 2021-11-01 → 2021-11-04 (+3d) | 2021-11-22 → 2021-11-25 (+3d) |  |  |  |
| 54 | Přesunutí aplikace z testovacího na produkční prostředí | 2021-11-22 → 2021-11-25 (+3d) | 2021-11-29 → 2021-12-02 (+3d) |  |  |  |
| 55 | Otestování aplikace v produkčním prostředí čili kontrola, zda migrace proběhla v pořádku | 2021-11-29 → 2021-12-02 (+3d) | 2021-12-02 → 2021-12-08 (+6d) |  |  |  |
| 56 | Projektový nárazník | 2021-12-02 → 2021-12-08 (+6d) | 2021-12-23 → 2021-12-28 (+5d) |  |  |  |

## Version 10 (saved 2020-12-05, file 414_003_T02_RP_priloha_B.mpp)

Note of the change: Dokončení přeplánování a vytvoření sestavy

Last finish 2021-12-28 → 2020-12-05 (-388d). Complete tasks 29 → 0.

Added:

| ID | Task | Duration | Start | Finish |
| --- | --- | --- | --- | --- |
| 57 | Projektový nárazník | 1d? | 2020-12-05 | 2020-12-05 |

Changed:

| ID | Task | Start | Finish | Duration | Complete | Total float | Predecessors | Other |
| --- | --- | --- | --- | --- | --- | --- | --- | --- |
| 1 | **Návrh a testování webové aplikace** | 2021-03-01 A → 2020-12-05 (-86d) | 2021-05-26 A → 2020-12-05 (-172d) | 62.7d → 0d | 100% → 0% | none → 0d |  | resources Duňa Líbalová [50%] → none; baseline start 2021-03-01 → none; baseline finish 2021-05-21 → none |
| 2 | Příprava konceptuální úrovně modelu | 2021-03-01 A → 2020-12-05 (-86d) | 2021-03-03 A → 2020-12-05 (-88d) | 3d → 1d? | 100% → 0% |  |  | resources Ladislav Samek → none; baseline start 2021-03-01 → none; baseline finish 2021-03-03 → none |
| 3 | Příprava technologické úrovně modelu | 2021-03-04 A → 2020-12-05 (-89d) | 2021-03-10 A → 2020-12-05 (-95d) | 4.1d → 1d? | 100% → 0% |  | 2 → none | resources Ladislav Samek → none; baseline start 2021-03-04 → none; baseline finish 2021-03-08 → none |
| 4 | Příprava implementační úrovně modelu | 2021-03-10 A → 2020-12-05 (-95d) | 2021-03-16 A → 2020-12-05 (-101d) | 4d → 1d? | 100% → 0% |  | 3 → none | resources Karel Kostelenec [50%] → none; baseline start 2021-03-09 → none; baseline finish 2021-03-12 → none |
| 5 | Vytvoření návrhů jednotného vizuálního stylu aplikace | 2021-03-01 A → 2020-12-05 (-86d) | 2021-03-08 A → 2020-12-05 (-93d) | 5.17d → 1d? | 100% → 0% |  | 2SS → none | resources Štěpán Mareška → none; baseline start 2021-03-01 → none; baseline finish 2021-03-08 → none |
| 6 | Výběr stylu a návrh vizualizace všech stránek aplikace | 2021-03-08 A → 2020-12-05 (-93d) | 2021-03-11 A → 2020-12-05 (-96d) | 3.32d → 1d? | 100% → 0% |  | 5 → none | resources Štěpán Mareška → none; baseline start 2021-03-08 → none; baseline finish 2021-03-11 → none |
| 7 | Vytvoření logiky celé aplikace | 2021-03-16 A → 2020-12-05 (-101d) | 2021-03-31 A → 2020-12-05 (-116d) | 11.02d → 1d? | 100% → 0% |  | 4 → none | resources Karel Kostelenec [50%]; Renata Tůmová → none; baseline start 2021-03-15 → none; baseline finish 2021-03-26 → none |
| 8 | Vytvoření databáze na základě datového modelu | 2021-03-31 A → 2020-12-05 (-116d) | 2021-04-07 A → 2020-12-05 (-123d) | 5.1d → 1d? | 100% → 0% |  | 7 → none | resources Ladislav Samek → none; baseline start 2021-03-29 → none; baseline finish 2021-04-02 → none |
| 9 | Napojení databáze na backend aplikace | 2021-04-07 A → 2020-12-05 (-123d) | 2021-04-09 A → 2020-12-05 (-125d) | 2.19d → 1d? | 100% → 0% |  | 8 → none | resources Ladislav Samek; Renata Tůmová → none; baseline start 2021-04-02 → none; baseline finish 2021-04-06 → none |
| 10 | Vytvoření administrátorské sekce aplikace | 2021-04-09 A → 2020-12-05 (-125d) | 2021-04-15 A → 2020-12-05 (-131d) | 4.37d → 1d? | 100% → 0% |  | 9 → none | resources Karel Kostelenec [50%]; Renata Tůmová → none; baseline start 2021-04-06 → none; baseline finish 2021-04-12 → none |
| 11 | Otestování programových kódů pomocí jednotkových testů | 2021-04-15 A → 2020-12-05 (-131d) | 2021-04-20 A → 2020-12-05 (-136d) | 3d → 1d? | 100% → 0% |  | 10 → none | resources Karel Kostelenec [50%]; Renata Tůmová → none; baseline start 2021-04-12 → none; baseline finish 2021-04-15 → none |
| 12 | Vytvoření HTML + CSS základu aplikace | 2021-03-11 A → 2020-12-05 (-96d) | 2021-03-23 A → 2020-12-05 (-108d) | 8.17d → 1d? | 100% → 0% |  | 6 → none | resources Štěpán Mareška → none; baseline start 2021-03-11 → none; baseline finish 2021-03-23 → none |
| 13 | Zavedení požadovaných uživatelských funkcionalit | 2021-03-23 A → 2020-12-05 (-108d) | 2021-04-02 A → 2020-12-05 (-118d) | 7.43d → 1d? | 100% → 0% |  | 12 → none | resources Věra Voplakalová → none; baseline start 2021-03-23 → none; baseline finish 2021-04-01 → none |
| 14 | Otestování a schválení grafického rozhraní aplikace | 2021-04-02 A → 2020-12-05 (-118d) | 2021-04-16 A → 2020-12-05 (-132d) | 10.33d → 1d? | 100% → 0% |  | 13 → none | resources Jiřina Černovská [50%]; Ludmila Machová → none; baseline start 2021-04-01 → none; baseline finish 2021-04-15 → none |
| 15 | Otestování a schválení zakomponovaných uživatelských funkcionalit | 2021-04-16 A → 2020-12-05 (-132d) | 2021-04-22 A → 2020-12-05 (-138d) | 4.56d → 1d? | 100% → 0% |  | 14 → none | resources Jiřina Černovská [50%]; Ludmila Machová → none; baseline start 2021-04-15 → none; baseline finish 2021-04-21 → none |
| 16 | Programové propojení frontendu a backendu | 2021-04-22 A → 2020-12-05 (-138d) | 2021-05-05 A → 2020-12-05 (-151d) | 8.89d → 1d? | 100% → 0% |  | 15, 11 → none | resources Renata Tůmová → none; baseline start 2021-04-21 → none; baseline finish 2021-05-03 → none |
| 17 | Vytvoření testovacího prostředí | 2021-05-05 A → 2020-12-05 (-151d) | 2021-05-20 A → 2020-12-05 (-166d) | 10.54d → 1d? | 100% → 0% |  | 16 → none | resources Jiřina Černovská [50%]; Ludmila Machová; Ladislav Samek [20%] → none; baseline start 2021-05-03 → none; baseline finish 2021-05-17 → none |
| 18 | Otestování aplikace v roli běžného uživatele | 2021-05-20 A → 2020-12-05 (-166d) | 2021-05-26 A → 2020-12-05 (-172d) | 4.29d → 1d? | 100% → 0% |  | 17 → none | resources Ludmila Machová → none; baseline start 2021-05-17 → none; baseline finish 2021-05-21 → none |
| 19 | Otestování administrátorské sekce v roli správce | 2021-05-20 A → 2020-12-05 (-166d) | 2021-05-26 A → 2020-12-05 (-172d) | 4d → 1d? | 100% → 0% |  | 17 → none | resources Lucie Pelantová → none; baseline start 2021-05-17 → none; baseline finish 2021-05-21 → none |
| 20 | **Zprostředkování přístupů do portálů eIdentita a Datové schránky** | 2021-05-26 A → 2020-12-05 (-172d) | 2021-06-28 A → 2020-12-05 (-205d) | 23.05d → 0d | 100% → 0% | none → 0d |  | resources Duňa Líbalová → none; baseline start 2021-05-21 → none; baseline finish 2021-06-22 → none |
| 21 | Zjištění podmínek pro získání přístupů do portálu eIdentita | 2021-05-26 A → 2020-12-05 (-172d) | 2021-06-01 A → 2020-12-05 (-178d) | 4.1d → 1d? | 100% → 0% |  | 19 → none | resources Oldřich Jareš → none; baseline start 2021-05-21 → none; baseline finish 2021-05-27 → none |
| 22 | Vypracování a zaslání žádosti Ministerstvu vnitra | 2021-06-11 A → 2020-12-05 (-188d) | 2021-06-15 A → 2020-12-05 (-192d) | 2d → 1d? | 100% → 0% |  | 21FS+8d → none | resources Oldřich Jareš → none; baseline start 2021-06-08 → none; baseline finish 2021-06-10 → none |
| 23 | Nastavení komunikace mezi aplikací a portálem eIdentita | 2021-06-15 A → 2020-12-05 (-192d) | 2021-06-17 A → 2020-12-05 (-194d) | 2.17d → 1d? | 100% → 0% |  | 22 → none | resources Renata Tůmová → none; baseline start 2021-06-10 → none; baseline finish 2021-06-14 → none |
| 24 | Nasazení skriptů pro autentizaci do backendu aplikace | 2021-06-17 A → 2020-12-05 (-194d) | 2021-06-23 A → 2020-12-05 (-200d) | 3.86d → 1d? | 100% → 0% |  | 23 → none | resources Renata Tůmová → none; baseline start 2021-06-14 → none; baseline finish 2021-06-16 → none |
| 25 | Otestování přihlášení | 2021-06-23 A → 2020-12-05 (-200d) | 2021-06-25 A → 2020-12-05 (-202d) | 2d → 1d? | 100% → 0% |  | 24 → none | resources Ludmila Machová → none; baseline start 2021-06-16 → none; baseline finish 2021-06-18 → none |
| 26 | Zjištění podmínek pro získání přístupů do portálu Datové schránky | 2021-05-26 A → 2020-12-05 (-172d) | 2021-06-01 A → 2020-12-05 (-178d) | 4d → 1d? | 100% → 0% |  | 19 → none | resources Oliver Křížka → none; baseline start 2021-05-21 → none; baseline finish 2021-05-27 → none |
| 27 | Vypracování a zaslání žádosti Ministerstvu vnitra | 2021-06-10 A → 2020-12-05 (-187d) | 2021-06-14 A → 2020-12-05 (-191d) | 2.57d → 1d? | 100% → 0% |  | 26FS+7d → none | resources Oliver Křížka → none; baseline start 2021-06-07 → none; baseline finish 2021-06-09 → none |
| 28 | Nastavení komunikace mezi aplikací a portálem eIdentita | 2021-06-14 A → 2020-12-05 (-191d) | 2021-06-17 A → 2020-12-05 (-194d) | 2.48d → 1d? | 100% → 0% |  | 27 → none | resources Věra Voplakalová → none; baseline start 2021-06-09 → none; baseline finish 2021-06-11 → none |
| 29 | Nastavení identifikace Datové schránky na základě autentizovaného uživatele | 2021-06-17 A → 2020-12-05 (-194d) | 2021-06-22 A → 2020-12-05 (-199d) | 2.91d → 1d? | 100% → 0% |  | 28 → none | resources Věra Voplakalová → none; baseline start 2021-06-11 → none; baseline finish 2021-06-16 → none |
| 30 | Nasazení skriptů pro odeslání notifikací do backendu aplikace | 2021-06-22 A → 2020-12-05 (-199d) | 2021-06-24 A → 2020-12-05 (-201d) | 2.09d → 1d? | 100% → 0% |  | 29 → none | resources Věra Voplakalová → none; baseline start 2021-06-16 → none; baseline finish 2021-06-18 → none |
| 31 | Otestování notifikačního odesílání | 2021-06-24 A → 2020-12-05 (-201d) | 2021-06-28 A → 2020-12-05 (-205d) | 2d → 1d? | 100% → 0% |  | 30 → none | resources Lucie Pelantová → none; baseline start 2021-06-18 → none; baseline finish 2021-06-22 → none |
| 32 | **Získání informací o povinnostech občanů vůči finančnímu úřadu** | 2021-06-28 A → 2020-12-05 (-205d) | 2021-10-27 → 2020-12-05 (-326d) | 87.05d → 0d | 2% → 0% |  |  | resources Eliška Schaumannová [50%] → none; baseline start 2021-06-22 → none; baseline finish 2021-10-15 → none |
| 33 | Vypracování a zaslání žádosti Ministerstvu financí o komunikační přístup do interních systémů finanční správy | 2021-06-28 A → 2020-12-05 (-205d) | 2021-07-05 → 2020-12-05 (-212d) | 5.54d → 1d? | 46% → 0% | 0d → none | 31, 25 → none | resources Oldřich Jareš → none; baseline start 2021-06-22 → none; baseline finish 2021-06-29 → none |
| 34 | Propojení s interním systémem finanční správy | 2021-07-14 → 2020-12-05 (-221d) | 2021-07-22 → 2020-12-05 (-229d) | 6.17d → 1d? |  | 5.67d → none | 33FS+5d → none | constraint start no earlier than 2021-07-14 → none; resources Karel Kostelenec [50%]; Renata Tůmová → none; baseline start 2021-07-06 → none; baseline finish 2021-07-14 → none |
| 35 | Analýza interních systémů finanční správy pro automatizovaný sběr informací | 2021-07-22 → 2020-12-05 (-229d) | 2021-09-09 → 2020-12-05 (-278d) | 35d → 1d? |  | 5.67d → none | 34 → none | resources Vladimír Psohlavec; Daniel Prodělal → none; baseline start 2021-07-14 → none; baseline finish 2021-09-01 → none |
| 36 | Vypracování reportu informací, které lze získávat automatizovaně | 2021-09-09 → 2020-12-05 (-278d) | 2021-09-16 → 2020-12-05 (-285d) | 5.17d → 1d? |  | 5.67d → none | 35 → none | resources Zbyněk Křivák; Daniel Prodělal → none; baseline start 2021-09-01 → none; baseline finish 2021-09-08 → none |
| 37 | Vytvoření skriptů pro získání informací | 2021-09-16 → 2020-12-05 (-285d) | 2021-09-29 → 2020-12-05 (-298d) | 9.5d → 1d? |  | 5.67d → none | 36 → none | resources David Klesl → none; baseline start 2021-09-08 → none; baseline finish 2021-09-22 → none |
| 38 | Otestování automatického sběru informací | 2021-09-29 → 2020-12-05 (-298d) | 2021-10-06 → 2020-12-05 (-305d) | 5d → 1d? |  | 5.67d → none | 37 → none | resources Ludmila Machová → none; baseline start 2021-09-22 → none; baseline finish 2021-09-29 → none |
| 39 | Vložení skriptů do backendu aplikace | 2021-10-06 → 2020-12-05 (-305d) | 2021-10-12 → 2020-12-05 (-311d) | 3.17d → 1d? |  | 5.67d → none | 38 → none | resources Karel Kostelenec [50%]; David Klesl [50%] → none; baseline start 2021-09-29 → none; baseline finish 2021-10-04 → none |
| 40 | Vytvoření skriptu pro pravidelné spouštění automatizovaného sběru informací | 2021-10-12 → 2020-12-05 (-311d) | 2021-10-19 → 2020-12-05 (-318d) | 5.83d → 1d? |  | 5.67d → none | 39 → none | resources Karel Kostelenec [50%]; David Klesl [50%] → none; baseline start 2021-10-04 → none; baseline finish 2021-10-12 → none |
| 41 | Analýza interních systémů finanční správy pro manuální sběr informací | 2021-07-06 → 2020-12-05 (-213d) | 2021-08-02 → 2020-12-05 (-240d) | 20d → 1d? |  | 0d → none | 33 → none | resources Alena Radová → none; baseline start 2021-06-29 → none; baseline finish 2021-07-27 → none |
| 42 | Vypracování reportu informací, které lze získat manuálně | 2021-08-03 → 2020-12-05 (-241d) | 2021-08-16 → 2020-12-05 (-254d) | 10d → 1d? |  | 0d → none | 41 → none | resources Alena Radová → none; baseline start 2021-07-27 → none; baseline finish 2021-08-10 → none |
| 43 | Kontaktování finanční správy ohledně výběru pracovníků | 2021-08-17 → 2020-12-05 (-255d) | 2021-09-13 → 2020-12-05 (-282d) | 20d → 1d? |  | 0d → none | 42 → none | resources Alena Radová → none; baseline start 2021-08-10 → none; baseline finish 2021-09-07 → none |
| 44 | Vypracování seznamu pracovníků pro zadávání informací do systému | 2021-09-14 → 2020-12-05 (-283d) | 2021-09-21 → 2020-12-05 (-290d) | 5.17d → 1d? |  | 0d → none | 43 → none | resources Alena Radová → none; baseline start 2021-09-07 → none; baseline finish 2021-09-14 → none |
| 45 | Vytvoření administrátorských účtů | 2021-09-21 → 2020-12-05 (-290d) | 2021-09-27 → 2020-12-05 (-296d) | 4d → 1d? |  | 0d → none | 44 → none | resources Karel Kostelenec [50%] → none; baseline start 2021-09-14 → none; baseline finish 2021-09-16 → none |
| 46 | Přidělení práv administrativních pracovníků | 2021-09-27 → 2020-12-05 (-296d) | 2021-09-29 → 2020-12-05 (-298d) | 2.34d → 1d? |  | 0d → none | 45 → none | resources Karel Kostelenec [50%] → none; baseline start 2021-09-16 → none; baseline finish 2021-09-17 → none |
| 47 | Zjištění kroků pro manuální zaznamenávání informací o povinnostech | 2021-09-29 → 2020-12-05 (-298d) | 2021-10-13 → 2020-12-05 (-312d) | 10d → 1d? |  | 0d → none | 46 → none | resources Daniel Prodělal → none; baseline start 2021-09-17 → none; baseline finish 2021-10-01 → none |
| 48 | Sepsání návodu k zadávání informací pro administrativní pracovníky | 2021-10-13 → 2020-12-05 (-312d) | 2021-10-27 → 2020-12-05 (-326d) | 10d → 1d? |  | 0d → none | 47 → none | resources Pavla Šopíková → none; baseline start 2021-10-01 → none; baseline finish 2021-10-15 → none |
| 49 | **Nasazení aplikace do produkčního prostředí** | 2021-10-27 → 2020-12-05 (-326d) | 2021-12-08 → 2020-12-05 (-368d) | 29.51d → 0d |  |  |  | resources Eliška Schaumannová [50%] → none; baseline start 2021-10-15 → none; baseline finish 2021-11-26 → none |
| 50 | Výběr domény | 2021-10-27 → 2020-12-05 (-326d) | 2021-11-01 → 2020-12-05 (-331d) | 3.17d → 1d? |  | 0d → none | 40, 48 → none | resources Oldřich Jareš → none; baseline start 2021-10-15 → none; baseline finish 2021-10-20 → none |
| 51 | Registrace a zakoupení domény | 2021-11-01 → 2020-12-05 (-331d) | 2021-11-02 → 2020-12-05 (-332d) | 1.17d → 1d? |  | 0d → none | 50 → none | resources Oldřich Jareš → none; baseline start 2021-10-20 → none; baseline finish 2021-10-21 → none |
| 52 | Výběr typu hostingu aplikace | 2021-11-02 → 2020-12-05 (-332d) | 2021-11-04 → 2020-12-05 (-334d) | 2d → 1d? |  | 0d → none | 51 → none | resources Oldřich Jareš → none; baseline start 2021-10-21 → none; baseline finish 2021-10-25 → none |
| 53 | Příprava prostředí pro všechny potřebné komponenty aplikace | 2021-11-04 → 2020-12-05 (-334d) | 2021-11-25 → 2020-12-05 (-355d) | 14.83d → 1d? |  | 0d → none | 52 → none | resources Oldřich Jareš → none; baseline start 2021-10-25 → none; baseline finish 2021-11-15 → none |
| 54 | Přesunutí aplikace z testovacího na produkční prostředí | 2021-11-25 → 2020-12-05 (-355d) | 2021-12-02 → 2020-12-05 (-362d) | 5.17d → 1d? |  | 0d → none | 53 → none | resources Oldřich Jareš → none; baseline start 2021-11-15 → none; baseline finish 2021-11-22 → none |
| 55 | Otestování aplikace v produkčním prostředí čili kontrola, zda migrace proběhla v pořádku | 2021-12-02 → 2020-12-05 (-362d) | 2021-12-08 → 2020-12-05 (-368d) | 3.17d → 1d? |  | 0d → none | 54 → none | resources Oldřich Jareš → none; baseline start 2021-11-22 → none; baseline finish 2021-11-26 → none |
| 56 | Projektový nárazník | 2021-12-08 → 2020-12-05 (-368d) | 2021-12-28 → 2020-12-05 (-388d) | 14.59d → 1d? |  | 0d → none | 55 → none | baseline start 2021-11-26 → none; baseline finish 2021-12-23 → none |

## Version 11 (data date 2021-06-30, saved 2020-12-05, file 414_003_T02_ZZ_priloha_B.mpp)

Note of the change: Před závěrečnou zprávou

Last finish 2020-12-05 → 2021-12-31 (+391d). Complete tasks 0 → 29.

Removed: 57 Projektový nárazník

Changed:

| ID | Task | Start | Finish | Duration | Complete | Total float | Predecessors | Other |
| --- | --- | --- | --- | --- | --- | --- | --- | --- |
| 1 | **Návrh a testování webové aplikace** | 2020-12-05 → 2021-03-01 A (+86d) | 2020-12-05 → 2021-05-26 A (+172d) | 0d → 62.7d | 0% → 100% | 0d → none |  | resources none → Duňa Líbalová [50%]; baseline start none → 2021-03-01; baseline finish none → 2021-05-21 |
| 2 | Příprava konceptuální úrovně modelu | 2020-12-05 → 2021-03-01 A (+86d) | 2020-12-05 → 2021-03-03 A (+88d) | 1d? → 3d | 0% → 100% |  |  | resources none → Ladislav Samek; baseline start none → 2021-03-01; baseline finish none → 2021-03-03 |
| 3 | Příprava technologické úrovně modelu | 2020-12-05 → 2021-03-04 A (+89d) | 2020-12-05 → 2021-03-10 A (+95d) | 1d? → 4.1d | 0% → 100% |  | none → 2 | resources none → Ladislav Samek; baseline start none → 2021-03-04; baseline finish none → 2021-03-08 |
| 4 | Příprava implementační úrovně modelu | 2020-12-05 → 2021-03-10 A (+95d) | 2020-12-05 → 2021-03-16 A (+101d) | 1d? → 4d | 0% → 100% |  | none → 3 | resources none → Karel Kostelenec [50%]; baseline start none → 2021-03-09; baseline finish none → 2021-03-12 |
| 5 | Vytvoření návrhů jednotného vizuálního stylu aplikace | 2020-12-05 → 2021-03-01 A (+86d) | 2020-12-05 → 2021-03-08 A (+93d) | 1d? → 5.17d | 0% → 100% |  | none → 2SS | resources none → Štěpán Mareška; baseline start none → 2021-03-01; baseline finish none → 2021-03-08 |
| 6 | Výběr stylu a návrh vizualizace všech stránek aplikace | 2020-12-05 → 2021-03-08 A (+93d) | 2020-12-05 → 2021-03-11 A (+96d) | 1d? → 3.32d | 0% → 100% |  | none → 5 | resources none → Štěpán Mareška; baseline start none → 2021-03-08; baseline finish none → 2021-03-11 |
| 7 | Vytvoření logiky celé aplikace | 2020-12-05 → 2021-03-16 A (+101d) | 2020-12-05 → 2021-03-31 A (+116d) | 1d? → 11.02d | 0% → 100% |  | none → 4 | resources none → Karel Kostelenec [50%]; Renata Tůmová; baseline start none → 2021-03-15; baseline finish none → 2021-03-26 |
| 8 | Vytvoření databáze na základě datového modelu | 2020-12-05 → 2021-03-31 A (+116d) | 2020-12-05 → 2021-04-07 A (+123d) | 1d? → 5.1d | 0% → 100% |  | none → 7 | resources none → Ladislav Samek; baseline start none → 2021-03-29; baseline finish none → 2021-04-02 |
| 9 | Napojení databáze na backend aplikace | 2020-12-05 → 2021-04-07 A (+123d) | 2020-12-05 → 2021-04-09 A (+125d) | 1d? → 2.19d | 0% → 100% |  | none → 8 | resources none → Ladislav Samek; Renata Tůmová; baseline start none → 2021-04-02; baseline finish none → 2021-04-06 |
| 10 | Vytvoření administrátorské sekce aplikace | 2020-12-05 → 2021-04-09 A (+125d) | 2020-12-05 → 2021-04-15 A (+131d) | 1d? → 4.37d | 0% → 100% |  | none → 9 | resources none → Karel Kostelenec [50%]; Renata Tůmová; baseline start none → 2021-04-06; baseline finish none → 2021-04-12 |
| 11 | Otestování programových kódů pomocí jednotkových testů | 2020-12-05 → 2021-04-15 A (+131d) | 2020-12-05 → 2021-04-20 A (+136d) | 1d? → 3d | 0% → 100% |  | none → 10 | resources none → Karel Kostelenec [50%]; Renata Tůmová; baseline start none → 2021-04-12; baseline finish none → 2021-04-15 |
| 12 | Vytvoření HTML + CSS základu aplikace | 2020-12-05 → 2021-03-11 A (+96d) | 2020-12-05 → 2021-03-23 A (+108d) | 1d? → 8.17d | 0% → 100% |  | none → 6 | resources none → Štěpán Mareška; baseline start none → 2021-03-11; baseline finish none → 2021-03-23 |
| 13 | Zavedení požadovaných uživatelských funkcionalit | 2020-12-05 → 2021-03-23 A (+108d) | 2020-12-05 → 2021-04-02 A (+118d) | 1d? → 7.43d | 0% → 100% |  | none → 12 | resources none → Věra Voplakalová; baseline start none → 2021-03-23; baseline finish none → 2021-04-01 |
| 14 | Otestování a schválení grafického rozhraní aplikace | 2020-12-05 → 2021-04-02 A (+118d) | 2020-12-05 → 2021-04-16 A (+132d) | 1d? → 10.33d | 0% → 100% |  | none → 13 | resources none → Jiřina Černovská [50%]; Ludmila Machová; baseline start none → 2021-04-01; baseline finish none → 2021-04-15 |
| 15 | Otestování a schválení zakomponovaných uživatelských funkcionalit | 2020-12-05 → 2021-04-16 A (+132d) | 2020-12-05 → 2021-04-22 A (+138d) | 1d? → 4.56d | 0% → 100% |  | none → 14 | resources none → Jiřina Černovská [50%]; Ludmila Machová; baseline start none → 2021-04-15; baseline finish none → 2021-04-21 |
| 16 | Programové propojení frontendu a backendu | 2020-12-05 → 2021-04-22 A (+138d) | 2020-12-05 → 2021-05-05 A (+151d) | 1d? → 8.89d | 0% → 100% |  | none → 15, 11 | resources none → Renata Tůmová; baseline start none → 2021-04-21; baseline finish none → 2021-05-03 |
| 17 | Vytvoření testovacího prostředí | 2020-12-05 → 2021-05-05 A (+151d) | 2020-12-05 → 2021-05-20 A (+166d) | 1d? → 10.54d | 0% → 100% |  | none → 16 | resources none → Jiřina Černovská [50%]; Ludmila Machová; Ladislav Samek [20%]; baseline start none → 2021-05-03; baseline finish none → 2021-05-17 |
| 18 | Otestování aplikace v roli běžného uživatele | 2020-12-05 → 2021-05-20 A (+166d) | 2020-12-05 → 2021-05-26 A (+172d) | 1d? → 4.29d | 0% → 100% |  | none → 17 | resources none → Ludmila Machová; baseline start none → 2021-05-17; baseline finish none → 2021-05-21 |
| 19 | Otestování administrátorské sekce v roli správce | 2020-12-05 → 2021-05-20 A (+166d) | 2020-12-05 → 2021-05-26 A (+172d) | 1d? → 4d | 0% → 100% |  | none → 17 | resources none → Lucie Pelantová; baseline start none → 2021-05-17; baseline finish none → 2021-05-21 |
| 20 | **Zprostředkování přístupů do portálů eIdentita a Datové schránky** | 2020-12-05 → 2021-05-26 A (+172d) | 2020-12-05 → 2021-06-28 A (+205d) | 0d → 23.05d | 0% → 100% | 0d → none |  | resources none → Duňa Líbalová; baseline start none → 2021-05-21; baseline finish none → 2021-06-22 |
| 21 | Zjištění podmínek pro získání přístupů do portálu eIdentita | 2020-12-05 → 2021-05-26 A (+172d) | 2020-12-05 → 2021-06-01 A (+178d) | 1d? → 4.1d | 0% → 100% |  | none → 19 | resources none → Oldřich Jareš; baseline start none → 2021-05-21; baseline finish none → 2021-05-27 |
| 22 | Vypracování a zaslání žádosti Ministerstvu vnitra | 2020-12-05 → 2021-06-11 A (+188d) | 2020-12-05 → 2021-06-15 A (+192d) | 1d? → 2d | 0% → 100% |  | none → 21FS+8d | resources none → Oldřich Jareš; baseline start none → 2021-06-08; baseline finish none → 2021-06-10 |
| 23 | Nastavení komunikace mezi aplikací a portálem eIdentita | 2020-12-05 → 2021-06-15 A (+192d) | 2020-12-05 → 2021-06-17 A (+194d) | 1d? → 2.17d | 0% → 100% |  | none → 22 | resources none → Renata Tůmová; baseline start none → 2021-06-10; baseline finish none → 2021-06-14 |
| 24 | Nasazení skriptů pro autentizaci do backendu aplikace | 2020-12-05 → 2021-06-17 A (+194d) | 2020-12-05 → 2021-06-23 A (+200d) | 1d? → 3.86d | 0% → 100% |  | none → 23 | resources none → Renata Tůmová; baseline start none → 2021-06-14; baseline finish none → 2021-06-16 |
| 25 | Otestování přihlášení | 2020-12-05 → 2021-06-23 A (+200d) | 2020-12-05 → 2021-06-25 A (+202d) | 1d? → 2d | 0% → 100% |  | none → 24 | resources none → Ludmila Machová; baseline start none → 2021-06-16; baseline finish none → 2021-06-18 |
| 26 | Zjištění podmínek pro získání přístupů do portálu Datové schránky | 2020-12-05 → 2021-05-26 A (+172d) | 2020-12-05 → 2021-06-01 A (+178d) | 1d? → 4d | 0% → 100% |  | none → 19 | resources none → Oliver Křížka; baseline start none → 2021-05-21; baseline finish none → 2021-05-27 |
| 27 | Vypracování a zaslání žádosti Ministerstvu vnitra | 2020-12-05 → 2021-06-10 A (+187d) | 2020-12-05 → 2021-06-14 A (+191d) | 1d? → 2.57d | 0% → 100% |  | none → 26FS+7d | resources none → Oliver Křížka; baseline start none → 2021-06-07; baseline finish none → 2021-06-09 |
| 28 | Nastavení komunikace mezi aplikací a portálem eIdentita | 2020-12-05 → 2021-06-14 A (+191d) | 2020-12-05 → 2021-06-17 A (+194d) | 1d? → 2.48d | 0% → 100% |  | none → 27 | resources none → Věra Voplakalová; baseline start none → 2021-06-09; baseline finish none → 2021-06-11 |
| 29 | Nastavení identifikace Datové schránky na základě autentizovaného uživatele | 2020-12-05 → 2021-06-17 A (+194d) | 2020-12-05 → 2021-06-22 A (+199d) | 1d? → 2.91d | 0% → 100% |  | none → 28 | resources none → Věra Voplakalová; baseline start none → 2021-06-11; baseline finish none → 2021-06-16 |
| 30 | Nasazení skriptů pro odeslání notifikací do backendu aplikace | 2020-12-05 → 2021-06-22 A (+199d) | 2020-12-05 → 2021-06-24 A (+201d) | 1d? → 2.09d | 0% → 100% |  | none → 29 | resources none → Věra Voplakalová; baseline start none → 2021-06-16; baseline finish none → 2021-06-18 |
| 31 | Otestování notifikačního odesílání | 2020-12-05 → 2021-06-24 A (+201d) | 2020-12-05 → 2021-06-28 A (+205d) | 1d? → 2d | 0% → 100% |  | none → 30 | resources none → Lucie Pelantová; baseline start none → 2021-06-18; baseline finish none → 2021-06-22 |
| 32 | **Získání informací o povinnostech občanů vůči finančnímu úřadu** | 2020-12-05 → 2021-06-28 A (+205d) | 2020-12-05 → 2021-10-27 (+326d) | 0d → 87.13d | 0% → 2% |  |  | resources none → Eliška Schaumannová [50%]; baseline start none → 2021-06-22; baseline finish none → 2021-10-15 |
| 33 | Vypracování a zaslání žádosti Ministerstvu financí o komunikační přístup do interních systémů finanční správy | 2020-12-05 → 2021-06-28 A (+205d) | 2020-12-05 → 2021-07-05 (+212d) | 1d? → 5.54d | 0% → 46% | none → 0d | none → 31, 25 | resources none → Oldřich Jareš; baseline start none → 2021-06-22; baseline finish none → 2021-06-29 |
| 34 | Propojení s interním systémem finanční správy | 2020-12-05 → 2021-07-14 (+221d) | 2020-12-05 → 2021-07-22 (+229d) | 1d? → 6.17d |  | none → 5.75d | none → 33FS+5d | constraint none → start no earlier than 2021-07-14; resources none → Karel Kostelenec [50%]; Renata Tůmová; baseline start none → 2021-07-06; baseline finish none → 2021-07-14 |
| 35 | Analýza interních systémů finanční správy pro automatizovaný sběr informací | 2020-12-05 → 2021-07-22 (+229d) | 2020-12-05 → 2021-09-09 (+278d) | 1d? → 35d |  | none → 5.75d | none → 34 | resources none → Vladimír Psohlavec; Daniel Prodělal; baseline start none → 2021-07-14; baseline finish none → 2021-09-01 |
| 36 | Vypracování reportu informací, které lze získávat automatizovaně | 2020-12-05 → 2021-09-09 (+278d) | 2020-12-05 → 2021-09-16 (+285d) | 1d? → 5.17d |  | none → 5.75d | none → 35 | resources none → Zbyněk Křivák; Daniel Prodělal; baseline start none → 2021-09-01; baseline finish none → 2021-09-08 |
| 37 | Vytvoření skriptů pro získání informací | 2020-12-05 → 2021-09-16 (+285d) | 2020-12-05 → 2021-09-29 (+298d) | 1d? → 9.5d |  | none → 5.75d | none → 36 | resources none → David Klesl [50%]; Josef Křupala [50%]; baseline start none → 2021-09-08; baseline finish none → 2021-09-22 |
| 38 | Otestování automatického sběru informací | 2020-12-05 → 2021-09-29 (+298d) | 2020-12-05 → 2021-10-06 (+305d) | 1d? → 5d |  | none → 5.75d | none → 37 | resources none → Ludmila Machová; baseline start none → 2021-09-22; baseline finish none → 2021-09-29 |
| 39 | Vložení skriptů do backendu aplikace | 2020-12-05 → 2021-10-06 (+305d) | 2020-12-05 → 2021-10-12 (+311d) | 1d? → 3.17d |  | none → 5.75d | none → 38 | resources none → Karel Kostelenec [50%]; David Klesl [50%]; baseline start none → 2021-09-29; baseline finish none → 2021-10-04 |
| 40 | Vytvoření skriptu pro pravidelné spouštění automatizovaného sběru informací | 2020-12-05 → 2021-10-12 (+311d) | 2020-12-05 → 2021-10-19 (+318d) | 1d? → 5.83d |  | none → 5.75d | none → 39 | resources none → Karel Kostelenec [50%]; David Klesl [50%]; baseline start none → 2021-10-04; baseline finish none → 2021-10-12 |
| 41 | Analýza interních systémů finanční správy pro manuální sběr informací | 2020-12-05 → 2021-07-06 (+213d) | 2020-12-05 → 2021-08-02 (+240d) | 1d? → 20d |  | none → 0d | none → 33 | resources none → Alena Radová; baseline start none → 2021-06-29; baseline finish none → 2021-07-27 |
| 42 | Vypracování reportu informací, které lze získat manuálně | 2020-12-05 → 2021-08-03 (+241d) | 2020-12-05 → 2021-08-16 (+254d) | 1d? → 10d |  | none → 0d | none → 41 | resources none → Alena Radová; baseline start none → 2021-07-27; baseline finish none → 2021-08-10 |
| 43 | Kontaktování finanční správy ohledně výběru pracovníků | 2020-12-05 → 2021-08-17 (+255d) | 2020-12-05 → 2021-09-13 (+282d) | 1d? → 20d |  | none → 0d | none → 42 | resources none → Alena Radová; baseline start none → 2021-08-10; baseline finish none → 2021-09-07 |
| 44 | Vypracování seznamu pracovníků pro zadávání informací do systému | 2020-12-05 → 2021-09-14 (+283d) | 2020-12-05 → 2021-09-21 (+290d) | 1d? → 5.17d |  | none → 0d | none → 43 | resources none → Alena Radová; baseline start none → 2021-09-07; baseline finish none → 2021-09-14 |
| 45 | Vytvoření administrátorských účtů | 2020-12-05 → 2021-09-21 (+290d) | 2020-12-05 → 2021-09-27 (+296d) | 1d? → 4.09d |  | none → 0d | none → 44 | resources none → Karel Kostelenec [50%]; baseline start none → 2021-09-14; baseline finish none → 2021-09-16 |
| 46 | Přidělení práv administrativních pracovníků | 2020-12-05 → 2021-09-27 (+296d) | 2020-12-05 → 2021-09-29 (+298d) | 1d? → 2.33d |  | none → 0d | none → 45 | resources none → Karel Kostelenec [50%]; baseline start none → 2021-09-16; baseline finish none → 2021-09-17 |
| 47 | Zjištění kroků pro manuální zaznamenávání informací o povinnostech | 2020-12-05 → 2021-09-29 (+298d) | 2020-12-05 → 2021-10-13 (+312d) | 1d? → 10d |  | none → 0d | none → 46 | resources none → Daniel Prodělal; baseline start none → 2021-09-17; baseline finish none → 2021-10-01 |
| 48 | Sepsání návodu k zadávání informací pro administrativní pracovníky | 2020-12-05 → 2021-10-13 (+312d) | 2020-12-05 → 2021-10-27 (+326d) | 1d? → 10d |  | none → 0d | none → 47 | resources none → Pavla Šopíková; baseline start none → 2021-10-01; baseline finish none → 2021-10-15 |
| 49 | **Nasazení aplikace do produkčního prostředí** | 2020-12-05 → 2021-10-27 (+326d) | 2020-12-05 → 2021-12-08 (+368d) | 0d → 29.51d |  |  |  | resources none → Eliška Schaumannová [50%]; baseline start none → 2021-10-15; baseline finish none → 2021-11-26 |
| 50 | Výběr domény | 2020-12-05 → 2021-10-27 (+326d) | 2020-12-05 → 2021-11-01 (+331d) | 1d? → 3.17d |  | none → 0d | none → 40, 48 | resources none → Oldřich Jareš; baseline start none → 2021-10-15; baseline finish none → 2021-10-20 |
| 51 | Registrace a zakoupení domény | 2020-12-05 → 2021-11-01 (+331d) | 2020-12-05 → 2021-11-02 (+332d) | 1d? → 1.17d |  | none → 0d | none → 50 | resources none → Oldřich Jareš; baseline start none → 2021-10-20; baseline finish none → 2021-10-21 |
| 52 | Výběr typu hostingu aplikace | 2020-12-05 → 2021-11-02 (+332d) | 2020-12-05 → 2021-11-04 (+334d) | 1d? → 2d |  | none → 0d | none → 51 | resources none → Oldřich Jareš; baseline start none → 2021-10-21; baseline finish none → 2021-10-25 |
| 53 | Příprava prostředí pro všechny potřebné komponenty aplikace | 2020-12-05 → 2021-11-04 (+334d) | 2020-12-05 → 2021-11-25 (+355d) | 1d? → 14.83d |  | none → 0d | none → 52 | resources none → Oldřich Jareš; baseline start none → 2021-10-25; baseline finish none → 2021-11-15 |
| 54 | Přesunutí aplikace z testovacího na produkční prostředí | 2020-12-05 → 2021-11-25 (+355d) | 2020-12-05 → 2021-12-02 (+362d) | 1d? → 5.17d |  | none → 0d | none → 53 | resources none → Oldřich Jareš; baseline start none → 2021-11-15; baseline finish none → 2021-11-22 |
| 55 | Otestování aplikace v produkčním prostředí čili kontrola, zda migrace proběhla v pořádku | 2020-12-05 → 2021-12-02 (+362d) | 2020-12-05 → 2021-12-08 (+368d) | 1d? → 3.17d |  | none → 0d | none → 54 | resources none → Oldřich Jareš; baseline start none → 2021-11-22; baseline finish none → 2021-11-26 |
| 56 | Projektový nárazník | 2020-12-05 → 2021-12-08 (+368d) | 2020-12-05 → 2021-12-31 (+391d) | 1d? → 17.71d |  | none → 0d | none → 55 |  |

## Version 12 (data date 2021-06-30, saved 2020-12-10, file 414_003_T02_ZZ_priloha_B.mpp)

Note of the change: Po generátoru skutečnosti

Last finish 2021-12-31 → 2022-01-18 (+18d).

Changed:

| ID | Task | Start | Finish | Duration | Complete | Total float |
| --- | --- | --- | --- | --- | --- | --- |
| 32 | **Získání informací o povinnostech občanů vůči finančnímu úřadu** |  | 2021-10-27 → 2021-11-11 (+15d) | 87.13d → 98.04d | 2% → 1% |  |
| 34 | Propojení s interním systémem finanční správy |  | 2021-07-22 → 2021-07-27 (+5d) | 6.17d → 9.29d |  | 5.75d → 11.24d |
| 35 | Analýza interních systémů finanční správy pro automatizovaný sběr informací | 2021-07-22 → 2021-07-27 (+5d) | 2021-09-09 → 2021-09-14 (+5d) |  |  | 5.75d → 11.24d |
| 36 | Vypracování reportu informací, které lze získávat automatizovaně | 2021-09-09 → 2021-09-14 (+5d) | 2021-09-16 → 2021-09-21 (+5d) | 5.17d → 5.3d |  | 5.75d → 11.24d |
| 37 | Vytvoření skriptů pro získání informací | 2021-09-16 → 2021-09-21 (+5d) | 2021-09-29 → 2021-10-05 (+6d) | 9.5d → 10.03d |  | 5.75d → 11.24d |
| 38 | Otestování automatického sběru informací | 2021-09-29 → 2021-10-05 (+6d) | 2021-10-06 → 2021-10-12 (+6d) | 5d → 5.1d |  | 5.75d → 11.24d |
| 39 | Vložení skriptů do backendu aplikace | 2021-10-06 → 2021-10-12 (+6d) | 2021-10-12 → 2021-10-15 (+3d) |  |  | 5.75d → 11.24d |
| 40 | Vytvoření skriptu pro pravidelné spouštění automatizovaného sběru informací | 2021-10-12 → 2021-10-15 (+3d) | 2021-10-19 → 2021-10-27 (+8d) | 5.83d → 7.37d |  | 5.75d → 11.24d |
| 43 | Kontaktování finanční správy ohledně výběru pracovníků |  | 2021-09-13 → 2021-09-21 (+8d) | 20d → 25.8d |  |  |
| 44 | Vypracování seznamu pracovníků pro zadávání informací do systému | 2021-09-14 → 2021-09-21 (+7d) | 2021-09-21 → 2021-09-28 (+7d) |  |  |  |
| 45 | Vytvoření administrátorských účtů | 2021-09-21 → 2021-09-28 (+7d) | 2021-09-27 → 2021-10-05 (+8d) | 4.09d → 4.51d |  |  |
| 46 | Přidělení práv administrativních pracovníků | 2021-09-27 → 2021-10-05 (+8d) | 2021-09-29 → 2021-10-07 (+8d) |  |  |  |
| 47 | Zjištění kroků pro manuální zaznamenávání informací o povinnostech | 2021-09-29 → 2021-10-07 (+8d) | 2021-10-13 → 2021-10-27 (+14d) | 10d → 13.78d |  |  |
| 48 | Sepsání návodu k zadávání informací pro administrativní pracovníky | 2021-10-13 → 2021-10-27 (+14d) | 2021-10-27 → 2021-11-11 (+15d) | 10d → 10.91d |  |  |
| 49 | **Nasazení aplikace do produkčního prostředí** | 2021-10-27 → 2021-11-11 (+15d) | 2021-12-08 → 2021-12-23 (+15d) | 29.51d → 29.84d |  |  |
| 50 | Výběr domény | 2021-10-27 → 2021-11-11 (+15d) | 2021-11-01 → 2021-11-16 (+15d) | 3.17d → 3.5d |  |  |
| 51 | Registrace a zakoupení domény | 2021-11-01 → 2021-11-17 (+16d) | 2021-11-02 → 2021-11-18 (+16d) |  |  |  |
| 52 | Výběr typu hostingu aplikace | 2021-11-02 → 2021-11-18 (+16d) | 2021-11-04 → 2021-11-22 (+18d) |  |  |  |
| 53 | Příprava prostředí pro všechny potřebné komponenty aplikace | 2021-11-04 → 2021-11-22 (+18d) | 2021-11-25 → 2021-12-10 (+15d) |  |  |  |
| 54 | Přesunutí aplikace z testovacího na produkční prostředí | 2021-11-25 → 2021-12-13 (+18d) | 2021-12-02 → 2021-12-20 (+18d) |  |  |  |
| 55 | Otestování aplikace v produkčním prostředí čili kontrola, zda migrace proběhla v pořádku | 2021-12-02 → 2021-12-20 (+18d) | 2021-12-08 → 2021-12-23 (+15d) |  |  |  |
| 56 | Projektový nárazník | 2021-12-08 → 2021-12-23 (+15d) | 2021-12-31 → 2022-01-18 (+18d) |  |  |  |

## Version 13 (data date 2021-12-31, saved 2020-12-11, file 414_003_T02_ZZ_priloha_B.mpp)

Note of the change: Dokončení projektu

Last finish 2022-01-18 → 2021-12-23 (-26d). Complete tasks 29 → 52.

Changed:

| ID | Task | Start | Finish | Duration | Complete | Total float |
| --- | --- | --- | --- | --- | --- | --- |
| 32 | **Získání informací o povinnostech občanů vůči finančnímu úřadu** |  | 2021-11-11 A |  | 1% → 100% | 0d → none |
| 33 | Vypracování a zaslání žádosti Ministerstvu financí o komunikační přístup do interních systémů finanční správy |  | 2021-07-05 A |  | 46% → 100% | 0d → none |
| 34 | Propojení s interním systémem finanční správy | 2021-07-14 A | 2021-07-27 A |  | 0% → 100% | 11.24d → none |
| 35 | Analýza interních systémů finanční správy pro automatizovaný sběr informací | 2021-07-27 A | 2021-09-14 A |  | 0% → 100% | 11.24d → none |
| 36 | Vypracování reportu informací, které lze získávat automatizovaně | 2021-09-14 A | 2021-09-21 A |  | 0% → 100% | 11.24d → none |
| 37 | Vytvoření skriptů pro získání informací | 2021-09-21 A | 2021-10-05 A |  | 0% → 100% | 11.24d → none |
| 38 | Otestování automatického sběru informací | 2021-10-05 A | 2021-10-12 A |  | 0% → 100% | 11.24d → none |
| 39 | Vložení skriptů do backendu aplikace | 2021-10-12 A | 2021-10-15 A |  | 0% → 100% | 11.24d → none |
| 40 | Vytvoření skriptu pro pravidelné spouštění automatizovaného sběru informací | 2021-10-15 A | 2021-10-27 A |  | 0% → 100% | 11.24d → none |
| 41 | Analýza interních systémů finanční správy pro manuální sběr informací | 2021-07-06 A | 2021-08-02 A |  | 0% → 100% | 0d → none |
| 42 | Vypracování reportu informací, které lze získat manuálně | 2021-08-03 A | 2021-08-16 A |  | 0% → 100% | 0d → none |
| 43 | Kontaktování finanční správy ohledně výběru pracovníků | 2021-08-17 A | 2021-09-21 A |  | 0% → 100% | 0d → none |
| 44 | Vypracování seznamu pracovníků pro zadávání informací do systému | 2021-09-21 A | 2021-09-28 A |  | 0% → 100% | 0d → none |
| 45 | Vytvoření administrátorských účtů | 2021-09-28 A | 2021-10-05 A |  | 0% → 100% | 0d → none |
| 46 | Přidělení práv administrativních pracovníků | 2021-10-05 A | 2021-10-07 A |  | 0% → 100% | 0d → none |
| 47 | Zjištění kroků pro manuální zaznamenávání informací o povinnostech | 2021-10-07 A | 2021-10-27 A |  | 0% → 100% | 0d → none |
| 48 | Sepsání návodu k zadávání informací pro administrativní pracovníky | 2021-10-27 A | 2021-11-11 A |  | 0% → 100% | 0d → none |
| 49 | **Nasazení aplikace do produkčního prostředí** | 2021-11-11 A | 2021-12-23 A |  | 0% → 100% | 0d → none |
| 50 | Výběr domény | 2021-11-11 A | 2021-11-16 A |  | 0% → 100% | 0d → none |
| 51 | Registrace a zakoupení domény | 2021-11-17 A | 2021-11-18 A |  | 0% → 100% | 0d → none |
| 52 | Výběr typu hostingu aplikace | 2021-11-18 A | 2021-11-22 A |  | 0% → 100% | 0d → none |
| 53 | Příprava prostředí pro všechny potřebné komponenty aplikace | 2021-11-22 A | 2021-12-10 A |  | 0% → 100% | 0d → none |
| 54 | Přesunutí aplikace z testovacího na produkční prostředí | 2021-12-13 A | 2021-12-20 A |  | 0% → 100% | 0d → none |
| 55 | Otestování aplikace v produkčním prostředí čili kontrola, zda migrace proběhla v pořádku | 2021-12-20 A | 2021-12-23 A |  | 0% → 100% | 0d → none |
| 56 | Projektový nárazník | 2021-12-23 A | 2022-01-18 → 2021-12-23 A (-26d) | 17.71d → 0.01d | 0% → 100% | 0d → none |
